# project_schedule

Schedule from MS Project, 2020-02-17 to 2021-08-20, costs in $.

## Calendars

- Standard: Mon-Fri 08:00-12:00, 13:00-17:00; Sat-Sun off.

## Resources

| Resource | Rate |
| --- | --- |
| Requirements Lead | 60 |
| Requirements Engineer 2 | 40 |
| Requirements Engineer 3 | 40 |
| Requirements Engineer 4 | 40 |
| Requirements Engineer 5 | 40 |
| Requirements Engineer 6 | 40 |
| Designer Lead | 70 |
| Design 1 | 40 |
| Design 2 | 40 |
| Design 3 | 40 |
| Design 4 | 40 |
| Design 5 | 40 |
| Developer 1 | 42 |
| Developer 2 | 42 |
| Developer 3 | 42 |
| Developer 4 | 42 |
| Developer 5 | 42 |
| Developer 6 | 42 |
| Developer 7 | 42 |
| Developer 8 | 42 |
| Development Lead | 55 |
| Developer 9 | 42 |
| Testing Lead | 50 |
| Tester 1 | 38 |
| Tester 2 | 38 |
| Tester 3 | 38 |
| Tester 4 | 38 |
| Tester 5 | 38 |
| Tester 6 | 38 |
| Tester 7 | 38 |
| Tester 8 | 38 |
| Deployment Lead | 36 |
| Deployer 1 | 28 |
| Deployer 2 | 28 |
| Gate materials | 900000 |

## Schedule

| ID | WBS | Task | Type | Duration | Start | Finish | Predecessors | Total slack | Resources | Work | Cost |
| --- | --- | --- | --- | --- | --- | --- | --- | --- | --- | --- | --- |
| 1 | 1 | Project Start | milestone, manual | 0d | 2020-02-19 | 2020-02-19 |  |  |  |  |  |
| 2 | 2 | **Requirements** |  | 14d | 2020-02-19 | 2020-03-09 |  | 0d |  | 520h | 22,720 |
| 3 | 2.1 | Create stakeholder map | manual | 4d | 2020-02-19 | 2020-02-24 | 1 |  | Requirements Lead | 32h | 1,920 |
| 4 | 2.2 | **Host Computer System Requirements** |  | 5d | 2020-02-19 | 2020-02-25 |  | 0d |  | 48h | 1,920 |
| 5 | 2.2.1 | Draft information sending requirements questions | manual | 2d | 2020-02-19 | 2020-02-20 | 1 |  | Requirements Engineer 2 | 16h | 640 |
| 6 | 2.2.2 | Draft data retrieval requirements questions | manual | 1d | 2020-02-19 | 2020-02-19 | 1 |  | Requirements Engineer 2 | 8h | 320 |
| 7 | 2.2.3 | Review all host computer system requirements questions | manual | 1d | 2020-02-21 | 2020-02-21 | 5, 6 |  | Requirements Engineer 2 | 8h | 320 |
| 8 | 2.2.4 | Finalize all host computer system requirements questions | manual | 2d | 2020-02-24 | 2020-02-25 | 7 |  | Requirements Engineer 2 | 16h | 640 |
| 9 | 2.3 | **Server/back-end** |  | 5d | 2020-02-19 | 2020-02-25 |  | 0d |  | 64h | 2,560 |
| 10 | 2.3.1 | Draft security requirements questions | manual | 2d | 2020-02-19 | 2020-02-20 | 1 |  | Requirements Engineer 3 | 16h | 640 |
| 11 | 2.3.2 | Draft communication requirements questions | manual | 2d | 2020-02-19 | 2020-02-20 | 1 |  | Requirements Engineer 3 | 16h | 640 |
| 12 | 2.3.3 | Draft DBMS requirements questions | manual | 1d | 2020-02-19 | 2020-02-19 | 1 |  | Requirements Engineer 3 | 8h | 320 |
| 13 | 2.3.4 | Review all server/back-end requirements questions | manual | 1d | 2020-02-21 | 2020-02-21 | 10, 11, 12 |  | Requirements Engineer 3 | 8h | 320 |
| 14 | 2.3.5 | Finalize all server/back-end requirements questions | manual | 2d | 2020-02-24 | 2020-02-25 | 13 |  | Requirements Engineer 3 | 16h | 640 |
| 15 | 2.4 | **Web interface** |  | 5d | 2020-02-19 | 2020-02-25 |  | 0d |  | 64h | 2,560 |
| 16 | 2.4.1 | Draft payment page requirements questions | manual | 1d | 2020-02-19 | 2020-02-19 | 1 |  | Requirements Engineer 4 | 8h | 320 |
| 17 | 2.4.2 | Draft user authentication requirements questions | manual | 2d | 2020-02-19 | 2020-02-20 | 1 |  | Requirements Engineer 4 | 16h | 640 |
| 18 | 2.4.3 | Draft parking map display requirements questions | manual | 1d | 2020-02-19 | 2020-02-19 | 1 |  | Requirements Engineer 4 | 8h | 320 |
| 19 | 2.4.4 | Draft admin page requirements questions | manual | 1d | 2020-02-19 | 2020-02-19 | 1 |  | Requirements Engineer 4 | 8h | 320 |
| 20 | 2.4.5 | Review all web interface requirements questions | manual | 1d | 2020-02-21 | 2020-02-21 | 16, 17, 18, 19 |  | Requirements Engineer 4 | 8h | 320 |
| 21 | 2.4.6 | Finalize all web interface requirements questions | manual | 2d | 2020-02-24 | 2020-02-25 | 20 |  | Requirements Engineer 4 | 16h | 640 |
| 22 | 2.5 | **Gate Hardware** |  | 5d | 2020-02-19 | 2020-02-25 |  | 0d |  | 56h | 2,240 |
| 23 | 2.5.1 | Draft gate dimensions requirements questions | manual | 2d | 2020-02-19 | 2020-02-20 | 1 |  | Requirements Engineer 5 | 16h | 640 |
| 24 | 2.5.2 | Draft gate sensor requirement questions | manual | 2d | 2020-02-19 | 2020-02-20 | 1 |  | Requirements Engineer 5 | 16h | 640 |
| 25 | 2.5.3 | Review all gate hardware requirements questions | manual | 1d | 2020-02-21 | 2020-02-21 | 23, 24 |  | Requirements Engineer 5 | 8h | 320 |
| 26 | 2.5.4 | Finalize all gate hardware requirements questions | manual | 2d | 2020-02-24 | 2020-02-25 | 25 |  | Requirements Engineer 5 | 16h | 640 |

| ID | WBS | Task | Type | Duration | Start | Finish | Predecessors | Total slack | Resources | Work | Cost |
| --- | --- | --- | --- | --- | --- | --- | --- | --- | --- | --- | --- |
| 27 | 2.6 | **Mobile application** |  | 6d | 2020-02-19 | 2020-02-26 |  | 0d |  | 72h | 2,880 |
| 28 | 2.6.1 | Draft payment page requirements questions | manual | 1d | 2020-02-19 | 2020-02-19 | 1 |  | Requirements Engineer 6 | 8h | 320 |
| 29 | 2.6.2 | Draft filtering/display requirements questions | manual | 1d | 2020-02-19 | 2020-02-19 | 1 |  | Requirements Engineer 6 | 8h | 320 |
| 30 | 2.6.3 | Draft parking lot availability requirements questions | manual | 2d | 2020-02-19 | 2020-02-20 | 1 |  | Requirements Engineer 6 | 16h | 640 |
| 31 | 2.6.4 | Draft user authentication requirements questions | manual | 1d | 2020-02-19 | 2020-02-19 | 1 |  | Requirements Engineer 6 | 8h | 320 |
| 32 | 2.6.5 | Review all mobile application requirements questions | manual | 2d | 2020-02-21 | 2020-02-24 | 28, 29, 30, 31 |  | Requirements Engineer 6 | 16h | 640 |
| 33 | 2.6.6 | Finalize all mobile application requirements questions | manual | 2d | 2020-02-25 | 2020-02-26 | 32 |  | Requirements Engineer 6 | 16h | 640 |
| 34 | 2.7 | Hold interviews with customer | manual | 3d | 2020-02-27 | 2020-03-02 | 3, 8, 14, 21, 26, 33 |  | Requirements Lead; Requirements Engineer 2; Requirements Engineer 3; Requirements Engineer 4; Requirements Engineer 5; Requirements Engineer 6 | 144h | 6,240 |
| 35 | 2.8 | Compile requirements into one document | manual | 2d | 2020-03-03 | 2020-03-04 | 34 |  | Requirements Lead | 16h | 960 |
| 36 | 2.9 | Finalize compiled requirements document | manual | 3d | 2020-03-05 | 2020-03-09 | 35 |  | Requirements Lead | 24h | 1,440 |
| 37 | 3 | **Design** |  | 11d | 2020-03-10 | 2020-03-24 |  | 0d |  | 544h | 26,320 |
| 38 | 3.1 | **UI/UX** |  | 6d | 2020-03-10 | 2020-03-17 |  | 0d |  | 104h | 4,880 |
| 39 | 3.1.1 | Draft payment page design | manual | 3d | 2020-03-10 | 2020-03-12 | 36 |  | Design 1 | 24h | 960 |
| 40 | 3.1.2 | Draft campus map display design | manual | 3d | 2020-03-10 | 2020-03-12 | 36 |  | Design 1 | 24h | 960 |
| 41 | 3.1.3 | Draft login/logout page design | manual | 3d | 2020-03-10 | 2020-03-12 | 36 |  | Design 1 | 24h | 960 |
| 42 | 3.1.4 | Review UI/UX design | manual | 1d | 2020-03-13 | 2020-03-13 | 39, 40, 41 |  | Design 1; Designer Lead | 16h | 880 |
| 43 | 3.1.5 | Finalize UI/UX design | manual | 2d | 2020-03-16 | 2020-03-17 | 42 |  | Designer Lead | 16h | 1,120 |
| 44 | 3.2 | **Technical Design** |  | 11d | 2020-03-10 | 2020-03-24 |  | 0d |  | 440h | 21,440 |
| 45 | 3.2.1 | **Draft host computer system design requirement questions** |  | 9d | 2020-03-10 | 2020-03-20 |  | 0d |  | 88h | 4,480 |
| 46 | 3.2.1.1 | Network design | manual | 5d | 2020-03-10 | 2020-03-16 | 36 |  | Design 2 | 40h | 1,600 |
| 47 | 3.2.1.2 | Review network design | manual | 2d | 2020-03-17 | 2020-03-18 | 46 |  | Design 2; Designer Lead | 32h | 1,760 |
| 48 | 3.2.1.3 | Finalize network design | manual | 2d | 2020-03-19 | 2020-03-20 | 47 |  | Designer Lead | 16h | 1,120 |
| 49 | 3.2.2 | **Server/back-end design** |  | 8d | 2020-03-10 | 2020-03-19 |  | 0d |  | 96h | 4,800 |
| 50 | 3.2.2.1 | Design schema | manual | 4d | 2020-03-10 | 2020-03-13 | 36 |  | Design 3 | 32h | 1,280 |
| 51 | 3.2.2.2 | Design database relationships | manual | 2d | 2020-03-10 | 2020-03-11 | 36 |  | Design 3 | 16h | 640 |
| 52 | 3.2.2.3 | Review server/back-end design | manual | 2d | 2020-03-16 | 2020-03-17 | 50, 51 |  | Design 3; Designer Lead | 32h | 1,760 |
| 53 | 3.2.2.4 | Finalize server/back-end design | manual | 2d | 2020-03-18 | 2020-03-19 | 52 |  | Designer Lead | 16h | 1,120 |

| ID | WBS | Task | Type | Duration | Start | Finish | Predecessors | Total slack | Resources | Work | Cost |
| --- | --- | --- | --- | --- | --- | --- | --- | --- | --- | --- | --- |
| 54 | 3.2.3 | **Gate hardware design** |  | 10d | 2020-03-10 | 2020-03-23 |  | 0d |  | 120h | 5,760 |
| 55 | 3.2.3.1 | Draft gate frame blueprint design | manual | 3d | 2020-03-10 | 2020-03-12 | 36 |  | Design 4 | 24h | 960 |
| 56 | 3.2.3.2 | Design sensor and gate frame integration | manual | 6d | 2020-03-10 | 2020-03-17 | 36 |  | Design 4 | 48h | 1,920 |
| 57 | 3.2.3.3 | Review gate hardware design | manual | 2d | 2020-03-18 | 2020-03-19 | 55, 56 |  | Design 4; Designer Lead | 32h | 1,760 |
| 58 | 3.2.3.4 | Finalize gate hardware design | manual | 2d | 2020-03-20 | 2020-03-23 | 57 |  | Designer Lead | 16h | 1,120 |
| 59 | 3.2.4 | **Mobile application** |  | 11d | 2020-03-10 | 2020-03-24 |  | 0d |  | 136h | 6,400 |
| 60 | 3.2.4.1 | Design back-end services | manual | 7d | 2020-03-10 | 2020-03-18 | 36 |  | Design 5 | 56h | 2,240 |
| 61 | 3.2.4.2 | **Design front-end services** |  | 2d | 2020-03-10 | 2020-03-11 |  | 0d |  | 32h | 1,280 |
| 62 | 3.2.4.2.1 | Design login/logout pages | manual | 2d | 2020-03-10 | 2020-03-11 | 36 |  | Design 5 | 16h | 640 |
| 63 | 3.2.4.2.2 | Design display of UTD campus map | manual | 2d | 2020-03-10 | 2020-03-11 | 36 |  | Design 5 | 16h | 640 |
| 64 | 3.2.4.3 | Review mobile application design | manual | 2d | 2020-03-19 | 2020-03-20 | 60, 62, 63 |  | Designer Lead; Design 5 | 32h | 1,760 |
| 65 | 3.2.4.4 | Finalize mobile application design | manual | 2d | 2020-03-23 | 2020-03-24 | 64 |  | Designer Lead | 16h | 1,120 |
| 66 | 4 | **Development** |  | 379d | 2020-02-26 | 2021-08-09 |  | 0d |  | 9704h | 1,248,376 |
| 67 | 4.1 | **Host computer system** |  | 45d | 2020-02-26 | 2020-04-28 |  | 0d |  | 776h | 32,592 |
| 68 | 4.1.1 | Build connection to mobile app | manual | 20d | 2020-03-25 | 2020-04-21 | 48, 65 |  | Developer 1; Developer 2 | 320h | 13,440 |
| 69 | 4.1.2 | Build connection to gate hardware | manual | 18d | 2020-03-24 | 2020-04-16 | 48, 58 |  | Developer 3; Developer 4 | 288h | 12,096 |
| 70 | 4.1.3 | Build connection to UTD database | manual | 6d | 2020-03-23 | 2020-03-30 | 48 |  | Developer 4 | 48h | 2,016 |
| 71 | 4.1.4 | Build real-time updating system | manual | 4d | 2020-03-23 | 2020-03-26 | 48 |  | Developer 6 | 32h | 1,344 |
| 72 | 4.1.5 | Install OS | manual | 1d | 2020-02-26 | 2020-02-26 | 8 |  | Developer 5 | 8h | 336 |
| 73 | 4.1.6 | Develop data encryption | manual | 5d | 2020-04-22 | 2020-04-28 | 68, 69, 70, 71, 72 |  | Developer 5; Developer 6 | 80h | 3,360 |
| 74 | 4.2 | **Gate hardware** |  | 360d | 2020-03-24 | 2021-08-09 |  | 0d |  | 7648h | 1,157,136 |
| 75 | 4.2.1 | Install RF sensors onto gate frame | manual | 2d | 2020-03-24 | 2020-03-25 | 58 |  | Developer 7 | 16h | 672 |
| 76 | 4.2.2 | Build connection to host computer system | manual | 18d | 2020-03-24 | 2020-04-16 | 48, 58 |  | Developer 1; Developer 2; Developer 3 | 432h | 18,144 |
| 77 | 4.2.3 | Order materials to build gate frame | manual | 90d | 2020-03-24 | 2020-07-27 | 58 |  | Development Lead | 720h | 39,600 |
| 78 | 4.2.4 | Build gate frame and RF sensor at every parking lot entrance | manual | 270d | 2020-07-28 | 2021-08-09 | 77 |  | Deployer 1; Deployer 2; Deployment Lead; Gate materials | 6480h | 1,098,720 |

| ID | WBS | Task | Type | Duration | Start | Finish | Predecessors | Total slack | Resources | Work | Cost |
| --- | --- | --- | --- | --- | --- | --- | --- | --- | --- | --- | --- |
| 79 | 4.3 | **Database** |  | 12d | 2020-03-20 | 2020-04-06 |  | 0d |  | 312h | 14,352 |
| 80 | 4.3.1 | Build schema | manual | 12d | 2020-03-20 | 2020-04-06 | 53 |  | Developer 9; Development Lead | 192h | 9,312 |
| 81 | 4.3.2 | Establish relationships | manual | 3d | 2020-03-20 | 2020-03-24 | 53 |  | Developer 8; Developer 9 | 48h | 2,016 |
| 82 | 4.3.3 | Establish joint tables | manual | 3d | 2020-03-20 | 2020-03-24 | 53 |  | Developer 8; Developer 9 | 48h | 2,016 |
| 83 | 4.3.4 | Install DBMS | manual | 1d | 2020-03-20 | 2020-03-20 | 53 |  | Developer 5 | 8h | 336 |
| 84 | 4.3.5 | Build foreign/primary key relations | manual | 2d | 2020-03-20 | 2020-03-23 | 53 |  | Developer 1 | 16h | 672 |
| 85 | 4.4 | **Mobile application** |  | 20d | 2020-03-25 | 2020-04-21 |  | 0d |  | 968h | 44,296 |
| 86 | 4.4.1 | **Front-end** |  | 15d | 2020-03-25 | 2020-04-14 |  | 0d |  | 448h | 20,376 |
| 87 | 4.4.1.1 | Program UTD campus map display | manual | 15d | 2020-03-25 | 2020-04-14 | 65 |  | Development Lead; Developer 5 | 240h | 11,640 |
| 88 | 4.4.1.2 | Program real-time updating map display | manual | 10d | 2020-03-25 | 2020-04-07 | 65 |  | Developer 4; Developer 5 | 160h | 6,720 |
| 89 | 4.4.1.3 | **Program login/logout pages** |  | 3d | 2020-03-25 | 2020-03-27 |  | 0d |  | 24h | 1,008 |
| 90 | 4.4.1.3.1 | Program user authentication procedure | manual | 3d | 2020-03-25 | 2020-03-27 | 65 |  | Developer 7 | 24h | 1,008 |
| 91 | 4.4.1.4 | **Program payment pages** |  | 3d | 2020-03-25 | 2020-03-27 |  | 0d |  | 24h | 1,008 |
| 92 | 4.4.1.4.1 | Program transaction validator | manual | 3d | 2020-03-25 | 2020-03-27 | 65 |  | Developer 8 | 24h | 1,008 |
| 93 | 4.4.2 | **Back-end** |  | 20d | 2020-03-25 | 2020-04-21 |  | 0d |  | 520h | 23,920 |
| 94 | 4.4.2.1 | Connect to "Google Maps" to pull image of UTD campus map | manual | 5d | 2020-03-25 | 2020-03-31 | 65 |  | Developer 9 | 40h | 1,680 |
| 95 | 4.4.2.2 | Create network connection to host computer system | manual | 20d | 2020-03-25 | 2020-04-21 | 48, 65 |  | Developer 3; Developer 6; Development Lead | 480h | 22,240 |
| 96 | 5 | **Testing** |  | 387d | 2020-02-27 | 2021-08-20 |  | 0d |  | 2352h | 96,000 |
| 97 | 5.1 | **Test mobile application** |  | 22d | 2020-03-30 | 2020-04-28 |  | 0d |  | 448h | 19,136 |
| 98 | 5.1.1 | Test UTD map display | manual | 10d | 2020-04-15 | 2020-04-28 | 87 |  | Tester 1 | 80h | 3,040 |
| 99 | 5.1.2 | Test colored parking spot availability | manual | 7d | 2020-04-15 | 2020-04-23 | 87 |  | Tester 2 | 56h | 2,128 |
| 100 | 5.1.3 | Test real-time parking lot updating | manual | 5d | 2020-04-08 | 2020-04-14 | 88 |  | Tester 3 | 40h | 1,520 |
| 101 | 5.1.4 | **Test login/logout pages** |  | 11d | 2020-03-30 | 2020-04-13 |  | 0d |  | 176h | 8,800 |
| 102 | 5.1.4.1 | Test user authentication | manual | 11d | 2020-03-30 | 2020-04-13 | 90 |  | Testing Lead | 88h | 4,400 |
| 103 | 5.1.4.2 | Test user data encryption | manual | 11d | 2020-03-30 | 2020-04-13 | 90 |  | Testing Lead | 88h | 4,400 |

| ID | WBS | Task | Type | Duration | Start | Finish | Predecessors | Total slack | Resources | Work | Cost |
| --- | --- | --- | --- | --- | --- | --- | --- | --- | --- | --- | --- |
| 104 | 5.1.5 | **Test payment page** |  | 6d | 2020-03-30 | 2020-04-06 |  | 0d |  | 96h | 3,648 |
| 105 | 5.1.5.1 | Test payment validity | manual | 6d | 2020-03-30 | 2020-04-06 | 92 |  | Tester 4 | 48h | 1,824 |
| 106 | 5.1.5.2 | Test payment data encryption | manual | 6d | 2020-03-30 | 2020-04-06 | 92 |  | Tester 5 | 48h | 1,824 |
| 107 | 5.2 | **Test gate hardware** |  | 9d | 2021-08-10 | 2021-08-20 |  | 0d |  | 720h | 29,088 |
| 108 | 5.2.1 | **Test RF sensors** |  | 9d | 2021-08-10 | 2021-08-20 |  | 0d |  | 432h | 16,416 |
| 109 | 5.2.1.1 | Test RF sensor accuracy of determining parking pass color | manual | 9d | 2021-08-10 | 2021-08-20 | 78 |  | Tester 6; Tester 7 | 144h | 5,472 |
| 110 | 5.2.1.2 | Test RF sensor speed of detemining parking pass color | manual | 9d | 2021-08-10 | 2021-08-20 | 78 |  | Tester 6; Tester 7 | 144h | 5,472 |
| 111 | 5.2.1.3 | Test data transmission speed over network | manual | 9d | 2021-08-10 | 2021-08-20 | 78 |  | Tester 6; Tester 7 | 144h | 5,472 |
| 112 | 5.2.2 | **Test gate frames** |  | 9d | 2021-08-10 | 2021-08-20 |  | 0d |  | 288h | 12,672 |
| 113 | 5.2.2.1 | Test sturdiness | manual | 9d | 2021-08-10 | 2021-08-20 | 78 |  | Tester 8; Testing Lead | 144h | 6,336 |
| 114 | 5.2.2.2 | Test vision impairment severity | manual | 9d | 2021-08-10 | 2021-08-20 | 78 |  | Tester 8; Testing Lead | 144h | 6,336 |
| 115 | 5.3 | **Test database/back-end** |  | 16d | 2020-04-07 | 2020-04-28 |  | 0d |  | 608h | 24,064 |
| 116 | 5.3.1 | Test data accuracy of incoming data | manual | 6d | 2020-04-07 | 2020-04-14 | 80, 81, 82, 83, 84 |  | Tester 1; Tester 3 | 96h | 3,648 |
| 117 | 5.3.2 | Test response time to queries | manual | 6d | 2020-04-07 | 2020-04-14 | 80, 81, 82, 83, 84 |  | Tester 3; Tester 5 | 96h | 3,648 |
| 118 | 5.3.3 | Test data integrity percentages | manual | 6d | 2020-04-07 | 2020-04-14 | 80, 81, 82, 83, 84 |  | Tester 7; Tester 8 | 96h | 3,648 |
| 119 | 5.3.4 | **Test database security** |  | 10d | 2020-04-15 | 2020-04-28 |  | 0d |  | 320h | 13,120 |
| 120 | 5.3.4.1 | Look for security holes in DBMS | manual | 10d | 2020-04-15 | 2020-04-28 | 116, 117, 118 |  | Tester 3; Tester 4; Tester 8; Testing Lead | 320h | 13,120 |
| 121 | 5.4 | **Test host computer system** |  | 53d | 2020-02-27 | 2020-05-11 |  | 0d |  | 296h | 12,400 |
| 122 | 5.4.1 | **Test security of host computer system** |  | 51d | 2020-02-27 | 2020-05-07 |  | 0d |  | 232h | 9,968 |
| 123 | 5.4.1.1 | Test OS security | manual | 5d | 2020-02-27 | 2020-03-04 | 72 |  | Tester 2 | 40h | 1,520 |
| 124 | 5.4.1.2 | Test network security | manual | 12d | 2020-04-22 | 2020-05-07 | 68, 69, 70 |  | Tester 8; Testing Lead | 192h | 8,448 |
| 125 | 5.4.2 | **Test repsonse times to queries** |  | 4d | 2020-04-29 | 2020-05-04 |  | 0d |  | 64h | 2,432 |
| 126 | 5.4.2.1 | Test average time responding to mobile app query | manual | 4d | 2020-04-29 | 2020-05-04 | 68, 69, 70, 71, 72, 73 |  | Tester 1 | 32h | 1,216 |
| 127 | 5.4.2.2 | Test average time responding to gate hardware data | manual | 4d | 2020-04-29 | 2020-05-04 | 68, 69, 70, 71, 72, 73 |  | Tester 1 | 32h | 1,216 |
| 128 | 5.4.3 | Test data integrity | manual | 5d | 2020-05-05 | 2020-05-11 | 126, 127 |  |  |  |  |

| ID | WBS | Task | Type | Duration | Start | Finish | Predecessors | Total slack | Resources | Work | Cost |
| --- | --- | --- | --- | --- | --- | --- | --- | --- | --- | --- | --- |
| 129 | 5.5 | **Test networks** |  | 8d | 2020-04-22 | 2020-05-01 |  | 0d |  | 280h | 11,312 |
| 130 | 5.5.1 | Test security | manual | 7d | 2020-04-22 | 2020-04-30 | 68, 69, 70 |  | Tester 7; Testing Lead | 112h | 4,928 |
| 131 | 5.5.2 | Test reliability | manual | 5d | 2020-04-22 | 2020-04-28 | 68, 69, 70 |  | Tester 5; Tester 8 | 80h | 3,040 |
| 132 | 5.5.3 | **Test speed** |  | 8d | 2020-04-22 | 2020-05-01 |  | 0d |  | 64h | 2,432 |
| 133 | 5.5.3.1 | Test for bottlenecks in network | manual | 8d | 2020-04-22 | 2020-05-01 | 68, 69, 70 |  | Tester 3 | 64h | 2,432 |
| 134 | 5.5.4 | **Test volume capacity** |  | 3d | 2020-04-22 | 2020-04-24 |  | 0d |  | 24h | 912 |
| 135 | 5.5.4.1 | **Find network bandwidth limit** |  | 3d | 2020-04-22 | 2020-04-24 |  | 0d |  | 24h | 912 |
| 136 | 5.5.4.1.1 | Test reaction to network going beyond bandwidth limit | manual | 3d | 2020-04-22 | 2020-04-24 | 68, 69, 70 |  | Tester 2 | 24h | 912 |
| 137 | 6 | **Deployment** |  | 68d | 2020-02-17 | 2020-05-20 |  | 52d |  | 128h | 3,712 |
| 138 | 6.1 | Setup host computer system | manual | 7d | 2020-05-12 | 2020-05-20 | 123, 124, 126, 127, 128 |  | Deployer 1 | 56h | 1,568 |
| 139 | 6.2 | Construct gate hardware |  | 1d | 2020-02-17 | 2020-02-17 |  | 394d |  |  |  |
| 140 | 6.3 | Establish connection between UTD database and app database | manual | 7d | 2020-04-29 | 2020-05-07 | 116, 117, 118, 120 |  | Deployer 2 | 56h | 1,568 |
| 141 | 6.4 | **Launch app** |  | 1d | 2020-04-29 | 2020-04-29 |  | 0d |  | 16h | 576 |
| 142 | 6.4.1 | Release on Apple App Store | manual | 1d | 2020-04-29 | 2020-04-29 | 98, 99, 100, 102, 103, 105, 106 |  | Deployment Lead | 8h | 288 |
| 143 | 6.4.2 | Release on Google Play Store | manual | 1d | 2020-04-29 | 2020-04-29 | 98, 99, 100, 102, 103, 105, 106 |  | Deployment Lead | 8h | 288 |
