# project_schedule

Schedule from MS Project, 2020-02-19 to 2021-12-22, costs in $.

## Calendars

- Standard: Mon-Fri 08:00-12:00, 13:00-17:00; Sat-Sun off.

## Resources

| Resource | Rate |
| --- | --- |
| Requirements Lead | 60 |
| Requirements Engineer 2 | 40 |
| Requirements Engineer 3 | 40 |
| Requirements Engineer 4 | 40 |
| Requirements Engineer 5 | 40 |
| Requirements Engineer 6 | 40 |
| Designer Lead | 70 |
| Design 1 | 40 |
| Design 2 | 40 |
| Design 3 | 40 |
| Design 4 | 40 |
| Design 5 | 40 |
| Developer 1 | 42 |
| Developer 2 | 42 |
| Developer 3 | 42 |
| Developer 4 | 42 |
| Developer 5 | 42 |
| Developer 6 | 42 |
| Developer 7 | 42 |
| Developer 8 | 42 |
| Development Lead | 55 |
| Developer 9 | 42 |
| Testing Lead | 50 |
| Tester 1 | 38 |
| Tester 2 | 38 |
| Tester 3 | 38 |
| Tester 4 | 38 |
| Tester 5 | 38 |
| Tester 6 | 38 |
| Tester 7 | 38 |
| Tester 8 | 38 |
| Deployment Lead | 36 |
| Deployer 1 | 28 |
| Deployer 2 | 28 |
| Gate materials | 900000 |
| 2 |  |
| 3 |  |

## Schedule

| ID | WBS | Task | Type | Duration | Start | Finish | Predecessors | Total slack | Resources | Work | Cost |
| --- | --- | --- | --- | --- | --- | --- | --- | --- | --- | --- | --- |
| 1 | 1 | Project Start | manual | 1d? | 2020-02-19 | 2020-02-19 |  |  |  |  |  |
| 2 | 2 | **Requirements** |  | 25d | 2020-02-20 | 2020-03-25 |  | 0d |  | 1376h | 59,072 |
| 3 | 2.1 | Create stakeholder map | manual | 4d | 2020-02-20 | 2020-02-25 | 1 |  | Requirements Lead | 32h | 1,920 |
| 4 | 2.2 | **Host Computer System Requirements** |  | 5d | 2020-02-20 | 2020-02-26 |  | 0d |  | 48h | 1,920 |
| 5 | 2.2.1 | Draft information sending requirements questions | manual | 2d | 2020-02-20 | 2020-02-21 | 1 |  | Requirements Engineer 2 | 16h | 640 |
| 6 | 2.2.2 | Draft data retrieval requirements questions | manual | 1d | 2020-02-20 | 2020-02-20 | 1 |  | Requirements Engineer 2 | 8h | 320 |
| 7 | 2.2.3 | Review all host computer system requirements questions | manual | 1d | 2020-02-24 | 2020-02-24 | 5, 6 |  | Requirements Engineer 2 | 8h | 320 |
| 8 | 2.2.4 | Finalize all host computer system requirements questions | manual | 2d | 2020-02-25 | 2020-02-26 | 7 |  | Requirements Engineer 2 | 16h | 640 |
| 9 | 2.3 | **Server/back-end** |  | 5d | 2020-02-20 | 2020-02-26 |  | 0d |  | 64h | 2,560 |
| 10 | 2.3.1 | Draft security requirements questions | manual | 2d | 2020-02-20 | 2020-02-21 | 1 |  | Requirements Engineer 3 | 16h | 640 |
| 11 | 2.3.2 | Draft communication requirements questions | manual | 2d | 2020-02-20 | 2020-02-21 | 1 |  | Requirements Engineer 3 | 16h | 640 |
| 12 | 2.3.3 | Draft DBMS requirements questions | manual | 1d | 2020-02-20 | 2020-02-20 | 1 |  | Requirements Engineer 3 | 8h | 320 |
| 13 | 2.3.4 | Review all server/back-end requirements questions | manual | 1d | 2020-02-24 | 2020-02-24 | 10, 11, 12 |  | Requirements Engineer 3 | 8h | 320 |
| 14 | 2.3.5 | Finalize all server/back-end requirements questions | manual | 2d | 2020-02-25 | 2020-02-26 | 13 |  | Requirements Engineer 3 | 16h | 640 |
| 15 | 2.4 | **Web interface** |  | 5d | 2020-02-20 | 2020-02-26 |  | 0d |  | 64h | 2,560 |
| 16 | 2.4.1 | Draft payment page requirements questions | manual | 1d | 2020-02-20 | 2020-02-20 | 1 |  | Requirements Engineer 4 | 8h | 320 |
| 17 | 2.4.2 | Draft user authentication requirements questions | manual | 2d | 2020-02-20 | 2020-02-21 | 1 |  | Requirements Engineer 4 | 16h | 640 |
| 18 | 2.4.3 | Draft parking map display requirements questions | manual | 1d | 2020-02-20 | 2020-02-20 | 1 |  | Requirements Engineer 4 | 8h | 320 |
| 19 | 2.4.4 | Draft admin page requirements questions | manual | 1d | 2020-02-20 | 2020-02-20 | 1 |  | Requirements Engineer 4 | 8h | 320 |
| 20 | 2.4.5 | Review all web interface requirements questions | manual | 1d | 2020-02-24 | 2020-02-24 | 16, 17, 18, 19 |  | Requirements Engineer 4 | 8h | 320 |
| 21 | 2.4.6 | Finalize all web interface requirements questions | manual | 2d | 2020-02-25 | 2020-02-26 | 20 |  | Requirements Engineer 4 | 16h | 640 |
| 22 | 2.5 | **Gate Hardware** |  | 5d | 2020-02-20 | 2020-02-26 |  | 0d |  | 56h | 2,240 |
| 23 | 2.5.1 | Draft gate dimensions requirements questions | manual | 2d | 2020-02-20 | 2020-02-21 | 1 |  | Requirements Engineer 5 | 16h | 640 |
| 24 | 2.5.2 | Draft gate sensor requirement questions | manual | 2d | 2020-02-20 | 2020-02-21 | 1 |  | Requirements Engineer 5 | 16h | 640 |
| 25 | 2.5.3 | Review all gate hardware requirements questions | manual | 1d | 2020-02-24 | 2020-02-24 | 23, 24 |  | Requirements Engineer 5 | 8h | 320 |
| 26 | 2.5.4 | Finalize all gate hardware requirements questions | manual | 2d | 2020-02-25 | 2020-02-26 | 25 |  | Requirements Engineer 5 | 16h | 640 |

| ID | WBS | Task | Type | Duration | Start | Finish | Predecessors | Total slack | Resources | Work | Cost |
| --- | --- | --- | --- | --- | --- | --- | --- | --- | --- | --- | --- |
| 27 | 2.6 | **Mobile application** |  | 6d | 2020-02-20 | 2020-02-27 |  | 0d |  | 72h | 2,880 |
| 28 | 2.6.1 | Draft payment page requirements questions | manual | 1d | 2020-02-20 | 2020-02-20 | 1 |  | Requirements Engineer 6 | 8h | 320 |
| 29 | 2.6.2 | Draft filtering/display requirements questions | manual | 1d | 2020-02-20 | 2020-02-20 | 1 |  | Requirements Engineer 6 | 8h | 320 |
| 30 | 2.6.3 | Draft parking lot availability requirements questions | manual | 2d | 2020-02-20 | 2020-02-21 | 1 |  | Requirements Engineer 6 | 16h | 640 |
| 31 | 2.6.4 | Draft user authentication requirements questions | manual | 1d | 2020-02-20 | 2020-02-20 | 1 |  | Requirements Engineer 6 | 8h | 320 |
| 32 | 2.6.5 | Review all mobile application requirements questions | manual | 2d | 2020-02-24 | 2020-02-25 | 28, 29, 30, 31 |  | Requirements Engineer 6 | 16h | 640 |
| 33 | 2.6.6 | Finalize all mobile application requirements questions | manual | 2d | 2020-02-26 | 2020-02-27 | 32 |  | Requirements Engineer 6 | 16h | 640 |
| 34 | 2.7 | Hold interviews with customer | manual | 14d | 2020-02-28 | 2020-03-18 | 3, 8, 14, 21, 26, 33 |  | Requirements Lead; Requirements Engineer 2; Requirements Engineer 3; Requirements Engineer 4; Requirements Engineer 5; Requirements Engineer 6 | 672h | 29,120 |
| 35 | 2.8 | Compile customer requirements into one document | manual | 2d | 2020-03-19 | 2020-03-20 | 34 |  | Requirements Lead | 16h | 960 |
| 36 | 2.9 | Finalize compiled requirements document | manual | 3d | 2020-03-23 | 2020-03-25 | 35 |  | Requirements Lead | 24h | 1,440 |
| 37 | 2.10 | Create Interview Plan for UI/UX | manual | 2d | 2020-02-20 | 2020-02-21 | 1 |  | Requirements Engineer 2; Requirements Engineer 4 | 32h | 1,280 |
| 38 | 2.11 | Create Interview Plan for Backend | manual | 2d | 2020-02-20 | 2020-02-21 | 1 |  | Requirements Engineer 3; Requirements Engineer 5 | 32h | 1,280 |
| 39 | 2.12 | Create Interview Question UI/UX | manual | 2d | 2020-02-24 | 2020-02-25 | 37 |  | Requirements Engineer 2; Design 4 | 32h | 1,280 |
| 40 | 2.13 | Create Interview Questions for Backend | manual | 2d | 2020-03-03 | 2020-03-04 | 38 |  | Requirements Engineer 3; Requirements Engineer 5 | 32h | 1,280 |
| 41 | 2.14 | Evaluate and Approve Interview Plans/Questions | manual | 1d | 2020-03-05 | 2020-03-05 | 38, 37, 39, 40 |  | Requirements Engineer 2; Requirements Engineer 3; Requirements Lead | 24h | 1,120 |
| 42 | 2.15 | Conduct Interview for UI/UX requirements | manual | 2d | 2020-03-09 | 2020-03-10 | 41 |  | Requirements Engineer 2; Developer 4 | 32h | 1,312 |
| 43 | 2.16 | Conduct Interview for Backend requirements | manual | 2d | 2020-03-09 | 2020-03-10 | 41 |  | Requirements Engineer 3; Requirements Engineer 5 | 32h | 1,280 |
| 44 | 2.17 | Requirements Document Draft for UI/UX | manual | 2d | 2020-03-11 | 2020-03-12 | 42 |  | Requirements Engineer 2 [50%]; Requirements Engineer 4 [50%]; Requirements Engineer 6 | 32h | 1,280 |
| 45 | 2.18 | Requirements Document Draft for Backend | manual | 2d | 2020-03-11 | 2020-03-12 | 43 |  | Requirements Engineer 3 [50%]; Requirements Engineer 5 [50%]; Requirements Engineer 6 | 32h | 1,280 |
| 46 | 2.19 | Finalize Requirements Document | manual | 1d | 2020-03-13 | 2020-03-13 | 44, 45 |  | Requirements Lead; Requirements Engineer 2; Requirements Engineer 3; Requirements Engineer 4; Requirements Engineer 5; Requirements Engineer 6 | 48h | 2,080 |
| 47 | 3 | **Design** |  | 25d | 2020-03-26 | 2020-04-29 |  | 0d |  | 984h | 43,920 |
| 48 | 3.1 | **UI/UX** |  | 10d | 2020-03-26 | 2020-04-08 |  | 0d |  | 200h | 8,720 |
| 49 | 3.1.1 | Draft payment page design | manual | 7d | 2020-03-26 | 2020-04-03 | 36 |  | Design 1 | 56h | 2,240 |
| 50 | 3.1.2 | Draft campus map display design | manual | 7d | 2020-03-26 | 2020-04-03 | 36 |  | Design 1 | 56h | 2,240 |
| 51 | 3.1.3 | Draft login/logout page design | manual | 7d | 2020-03-26 | 2020-04-03 | 36 |  | Design 1 | 56h | 2,240 |
| 52 | 3.1.4 | Review UI/UX design | manual | 1d | 2020-04-06 | 2020-04-06 | 49, 50, 51 |  | Design 1; Designer Lead | 16h | 880 |
| 53 | 3.1.5 | Finalize UI/UX design | manual | 2d | 2020-04-07 | 2020-04-08 | 52 |  | Designer Lead | 16h | 1,120 |

| ID | WBS | Task | Type | Duration | Start | Finish | Predecessors | Total slack | Resources | Work | Cost |
| --- | --- | --- | --- | --- | --- | --- | --- | --- | --- | --- | --- |
| 54 | 3.2 | **Technical Design** |  | 25d | 2020-03-26 | 2020-04-29 |  | 0d |  | 784h | 35,200 |
| 55 | 3.2.1 | **Draft host computer system design requirement questions** |  | 19d | 2020-03-26 | 2020-04-21 |  | 0d |  | 168h | 7,680 |
| 56 | 3.2.1.1 | Network design | manual | 15d | 2020-03-26 | 2020-04-15 | 36 |  | Design 2 | 120h | 4,800 |
| 57 | 3.2.1.2 | Review network design | manual | 2d | 2020-04-16 | 2020-04-17 | 56 |  | Design 2; Designer Lead | 32h | 1,760 |
| 58 | 3.2.1.3 | Finalize network design | manual | 2d | 2020-04-20 | 2020-04-21 | 57 |  | Designer Lead | 16h | 1,120 |
| 59 | 3.2.2 | **Server/back-end design** |  | 8d | 2020-03-26 | 2020-04-06 |  | 0d |  | 96h | 4,800 |
| 60 | 3.2.2.1 | Design schema | manual | 4d | 2020-03-26 | 2020-03-31 | 36 |  | Design 3 | 32h | 1,280 |
| 61 | 3.2.2.2 | Design database relationships | manual | 2d | 2020-03-26 | 2020-03-27 | 36 |  | Design 3 | 16h | 640 |
| 62 | 3.2.2.3 | Review server/back-end design | manual | 2d | 2020-04-01 | 2020-04-02 | 60, 61 |  | Design 3; Designer Lead | 32h | 1,760 |
| 63 | 3.2.2.4 | Finalize server/back-end design | manual | 2d | 2020-04-03 | 2020-04-06 | 62 |  | Designer Lead | 16h | 1,120 |
| 64 | 3.2.3 | **Gate hardware design** |  | 16d | 2020-03-26 | 2020-04-16 |  | 0d |  | 192h | 8,640 |
| 65 | 3.2.3.1 | Draft gate frame blueprint design | manual | 12d | 2020-03-26 | 2020-04-10 | 36 |  | Design 4 | 96h | 3,840 |
| 66 | 3.2.3.2 | Design sensor and gate frame integration | manual | 6d | 2020-03-26 | 2020-04-02 | 36 |  | Design 4 | 48h | 1,920 |
| 67 | 3.2.3.3 | Review gate hardware design | manual | 2d | 2020-04-13 | 2020-04-14 | 65, 66 |  | Design 4; Designer Lead | 32h | 1,760 |
| 68 | 3.2.3.4 | Finalize gate hardware design | manual | 2d | 2020-04-15 | 2020-04-16 | 67 |  | Designer Lead | 16h | 1,120 |
| 69 | 3.2.4 | **Mobile application** |  | 25d | 2020-03-26 | 2020-04-29 |  | 0d |  | 328h | 14,080 |
| 70 | 3.2.4.1 | Design back-end services | manual | 21d | 2020-03-26 | 2020-04-23 | 36 |  | Design 5 | 168h | 6,720 |
| 71 | 3.2.4.2 | **Design front-end services** |  | 7d | 2020-03-26 | 2020-04-03 |  | 0d |  | 112h | 4,480 |
| 72 | 3.2.4.2.1 | Design login/logout pages | manual | 7d | 2020-03-26 | 2020-04-03 | 36 |  | Design 5 | 56h | 2,240 |
| 73 | 3.2.4.2.2 | Design display of UTD campus map | manual | 7d | 2020-03-26 | 2020-04-03 | 36 |  | Design 5 | 56h | 2,240 |
| 74 | 3.2.4.3 | Review mobile application design | manual | 2d | 2020-04-24 | 2020-04-27 | 70, 72, 73 |  | Designer Lead; Design 5 | 32h | 1,760 |
| 75 | 3.2.4.4 | Finalize mobile application design | manual | 2d | 2020-04-28 | 2020-04-29 | 74 |  | Designer Lead | 16h | 1,120 |
| 76 | 4 | **Development** |  | 396d | 2020-02-27 | 2021-09-02 |  | 0d |  | 10624h | 1,287,016 |
| 77 | 4.1 | **Host computer system** |  | 70d | 2020-02-27 | 2020-06-03 |  | 0d |  | 776h | 32,592 |
| 78 | 4.1.1 | Build connection to mobile app | manual | 20d | 2020-04-30 | 2020-05-27 | 58, 75 |  | Developer 1; Developer 2 | 320h | 13,440 |
| 79 | 4.1.2 | Build connection to gate hardware | manual | 18d | 2020-04-22 | 2020-05-15 | 58, 68 |  | Developer 3; Developer 4 | 288h | 12,096 |
| 80 | 4.1.3 | Build connection to UTD database | manual | 6d | 2020-04-22 | 2020-04-29 | 58 |  | Developer 4 | 48h | 2,016 |
| 81 | 4.1.4 | Build real-time updating system | manual | 4d | 2020-04-22 | 2020-04-27 | 58 |  | Developer 6 | 32h | 1,344 |
| 82 | 4.1.5 | Install OS | manual | 1d | 2020-02-27 | 2020-02-27 | 8 |  | Developer 5 | 8h | 336 |
| 83 | 4.1.6 | Develop data encryption | manual | 5d | 2020-05-28 | 2020-06-03 | 78, 79, 80, 81, 82 |  | Developer 5; Developer 6 | 80h | 3,360 |

| ID | WBS | Task | Type | Duration | Start | Finish | Predecessors | Total slack | Resources | Work | Cost |
| --- | --- | --- | --- | --- | --- | --- | --- | --- | --- | --- | --- |
| 84 | 4.2 | **Gate hardware** |  | 360d | 2020-04-17 | 2021-09-02 |  | 0d |  | 7648h | 1,157,136 |
| 85 | 4.2.1 | Install RF sensors onto gate frame | manual | 2d | 2020-04-17 | 2020-04-20 | 68 |  | Developer 7 | 16h | 672 |
| 86 | 4.2.2 | Build connection to host computer system | manual | 18d | 2020-04-22 | 2020-05-15 | 58, 68 |  | Developer 1; Developer 2; Developer 3 | 432h | 18,144 |
| 87 | 4.2.3 | Order materials to build gate frame | manual | 90d | 2020-04-17 | 2020-08-20 | 68 |  | Development Lead | 720h | 39,600 |
| 88 | 4.2.4 | Build gate frame and RF sensor at every parking lot entrance | manual | 270d | 2020-08-21 | 2021-09-02 | 87 |  | Deployer 1; Deployer 2; Deployment Lead; Gate materials | 6480h | 1,098,720 |
| 89 | 4.3 | **Database** |  | 12d | 2020-04-07 | 2020-04-22 |  | 0d |  | 312h | 14,352 |
| 90 | 4.3.1 | Build schema | manual | 12d | 2020-04-07 | 2020-04-22 | 63 |  | Developer 9; Development Lead | 192h | 9,312 |
| 91 | 4.3.2 | Establish relationships | manual | 3d | 2020-04-07 | 2020-04-09 | 63 |  | Developer 8; Developer 9 | 48h | 2,016 |
| 92 | 4.3.3 | Establish joint tables | manual | 3d | 2020-04-07 | 2020-04-09 | 63 |  | Developer 8; Developer 9 | 48h | 2,016 |
| 93 | 4.3.4 | Install DBMS | manual | 1d | 2020-04-07 | 2020-04-07 | 63 |  | Developer 5 | 8h | 336 |
| 94 | 4.3.5 | Build foreign/primary key relations | manual | 2d | 2020-04-07 | 2020-04-08 | 63 |  | Developer 1 | 16h | 672 |
| 95 | 4.4 | **Mobile application** |  | 69d | 2020-03-25 | 2020-06-29 |  | 0d |  | 1888h | 82,936 |
| 96 | 4.4.1 | **Front-end** |  | 64d | 2020-03-25 | 2020-06-22 |  | 0d |  | 816h | 35,832 |
| 97 | 4.4.1.1 | Program UTD campus map display | manual | 15d | 2020-04-30 | 2020-05-20 | 75 |  | Development Lead; Developer 5 | 240h | 11,640 |
| 98 | 4.4.1.2 | Program real-time updating map display | manual | 10d | 2020-04-30 | 2020-05-13 | 75 |  | Developer 4; Developer 5 | 160h | 6,720 |
| 99 | 4.4.1.3 | Write unit tests | manual | 23d | 2020-05-21 | 2020-06-22 | 97, 98 |  | Developer 7; Developer 8 | 368h | 15,456 |
| 100 | 4.4.1.4 | **Program login/logout pages** |  | 3d | 2020-03-25 | 2020-03-27 |  | 0d |  | 24h | 1,008 |
| 101 | 4.4.1.4.1 | Program user authentication procedure | manual | 3d | 2020-03-25 | 2020-03-27 | 75 |  | Developer 7 | 24h | 1,008 |
| 102 | 4.4.1.5 | **Program payment pages** |  | 3d | 2020-03-25 | 2020-03-27 |  | 0d |  | 24h | 1,008 |
| 103 | 4.4.1.5.1 | Program transaction validator | manual | 3d | 2020-03-25 | 2020-03-27 | 75 |  | Developer 8 | 24h | 1,008 |
| 104 | 4.4.2 | **Back-end** |  | 43d | 2020-04-30 | 2020-06-29 |  | 0d |  | 1072h | 47,104 |
| 105 | 4.4.2.1 | Connect to "Google Maps" to pull image of UTD campus map | manual | 5d | 2020-04-30 | 2020-05-06 | 75 |  | Developer 9 | 40h | 1,680 |
| 106 | 4.4.2.2 | Create network connection to host computer system | manual | 20d | 2020-04-30 | 2020-05-27 | 58, 75 |  | Developer 3; Developer 6; Development Lead | 480h | 22,240 |
| 107 | 4.4.2.3 | Write unit tests | manual | 23d | 2020-05-28 | 2020-06-29 | 105, 106 |  | Developer 1; Developer 2; Developer 3 | 552h | 23,184 |

| ID | WBS | Task | Type | Duration | Start | Finish | Predecessors | Total slack | Resources | Work | Cost |
| --- | --- | --- | --- | --- | --- | --- | --- | --- | --- | --- | --- |
| 108 | 5 | **Testing** |  | 474d | 2020-02-28 | 2021-12-22 |  | 0d |  | 4840h | 197,264 |
| 109 | 5.1 | **Test mobile application** |  | 48d | 2020-03-30 | 2020-06-03 |  | 0d |  | 448h | 19,136 |
| 110 | 5.1.1 | Test UTD map display | manual | 10d | 2020-05-21 | 2020-06-03 | 97 |  | Tester 1 | 80h | 3,040 |
| 111 | 5.1.2 | Test colored parking spot availability | manual | 7d | 2020-05-21 | 2020-05-29 | 97 |  | Tester 2 | 56h | 2,128 |
| 112 | 5.1.3 | Test real-time parking lot updating | manual | 5d | 2020-05-14 | 2020-05-20 | 98 |  | Tester 3 | 40h | 1,520 |
| 113 | 5.1.4 | **Test login/logout pages** |  | 11d | 2020-03-30 | 2020-04-13 |  | 0d |  | 176h | 8,800 |
| 114 | 5.1.4.1 | Test user authentication | manual | 11d | 2020-03-30 | 2020-04-13 | 101 |  | Testing Lead | 88h | 4,400 |
| 115 | 5.1.4.2 | Test user data encryption | manual | 11d | 2020-03-30 | 2020-04-13 | 101 |  | Testing Lead | 88h | 4,400 |
| 116 | 5.1.5 | **Test payment page** |  | 6d | 2020-03-30 | 2020-04-06 |  | 0d |  | 96h | 3,648 |
| 117 | 5.1.5.1 | Test payment validity | manual | 6d | 2020-03-30 | 2020-04-06 | 103 |  | Tester 4 | 48h | 1,824 |
| 118 | 5.1.5.2 | Test payment data encryption | manual | 6d | 2020-03-30 | 2020-04-06 | 103 |  | Tester 5 | 48h | 1,824 |
| 119 | 5.2 | **Test gate hardware** |  | 9d | 2021-09-03 | 2021-09-15 |  | 0d |  | 720h | 29,088 |
| 120 | 5.2.1 | **Test RF sensors** |  | 9d | 2021-09-03 | 2021-09-15 |  | 0d |  | 432h | 16,416 |
| 121 | 5.2.1.1 | Test RF sensor accuracy of determining parking pass color | manual | 9d | 2021-09-03 | 2021-09-15 | 88 |  | Tester 6; Tester 7 | 144h | 5,472 |
| 122 | 5.2.1.2 | Test RF sensor speed of detemining parking pass color | manual | 9d | 2021-09-03 | 2021-09-15 | 88 |  | Tester 6; Tester 7 | 144h | 5,472 |
| 123 | 5.2.1.3 | Test data transmission speed over network | manual | 9d | 2021-09-03 | 2021-09-15 | 88 |  | Tester 6; Tester 7 | 144h | 5,472 |
| 124 | 5.2.2 | **Test gate frames** |  | 9d | 2021-09-03 | 2021-09-15 |  | 0d |  | 288h | 12,672 |
| 125 | 5.2.2.1 | Test sturdiness | manual | 9d | 2021-09-03 | 2021-09-15 | 88 |  | Tester 8; Testing Lead | 144h | 6,336 |
| 126 | 5.2.2.2 | Test vision impairment severity | manual | 9d | 2021-09-03 | 2021-09-15 | 88 |  | Tester 8; Testing Lead | 144h | 6,336 |
| 127 | 5.3 | **Test database/back-end** |  | 16d | 2020-04-23 | 2020-05-14 |  | 0d |  | 608h | 24,064 |
| 128 | 5.3.1 | Test data accuracy of incoming data | manual | 6d | 2020-04-23 | 2020-04-30 | 90, 91, 92, 93, 94 |  | Tester 1; Tester 3 | 96h | 3,648 |
| 129 | 5.3.2 | Test response time to queries | manual | 6d | 2020-04-23 | 2020-04-30 | 90, 91, 92, 93, 94 |  | Tester 3; Tester 5 | 96h | 3,648 |
| 130 | 5.3.3 | Test data integrity percentages | manual | 6d | 2020-04-23 | 2020-04-30 | 90, 91, 92, 93, 94 |  | Tester 7; Tester 8 | 96h | 3,648 |
| 131 | 5.3.4 | **Test database security** |  | 10d | 2020-05-01 | 2020-05-14 |  | 0d |  | 320h | 13,120 |
| 132 | 5.3.4.1 | Look for security holes in DBMS | manual | 10d | 2020-05-01 | 2020-05-14 | 128, 129, 130 |  | Tester 3; Tester 4; Tester 8; Testing Lead | 320h | 13,120 |

| ID | WBS | Task | Type | Duration | Start | Finish | Predecessors | Total slack | Resources | Work | Cost |
| --- | --- | --- | --- | --- | --- | --- | --- | --- | --- | --- | --- |
| 133 | 5.4 | **Test host computer system** |  | 78d | 2020-02-28 | 2020-06-16 |  | 0d |  | 456h | 18,480 |
| 134 | 5.4.1 | **Test security of host computer system** |  | 76d | 2020-02-28 | 2020-06-12 |  | 0d |  | 312h | 13,008 |
| 135 | 5.4.1.1 | Test OS security | manual | 5d | 2020-02-28 | 2020-03-05 | 82 |  | Tester 2; Tester 3; Tester 4 | 120h | 4,560 |
| 136 | 5.4.1.2 | Test network security | manual | 12d | 2020-05-28 | 2020-06-12 | 78, 79, 80 |  | Tester 8; Testing Lead | 192h | 8,448 |
| 137 | 5.4.2 | **Test repsonse times to queries** |  | 4d | 2020-06-04 | 2020-06-09 |  | 0d |  | 64h | 2,432 |
| 138 | 5.4.2.1 | Test average time responding to mobile app query | manual | 4d | 2020-06-04 | 2020-06-09 | 78, 79, 80, 81, 82, 83 |  | Tester 1 | 32h | 1,216 |
| 139 | 5.4.2.2 | Test average time responding to gate hardware data | manual | 4d | 2020-06-04 | 2020-06-09 | 78, 79, 80, 81, 82, 83 |  | Tester 4 | 32h | 1,216 |
| 140 | 5.4.3 | Test data integrity | manual | 5d | 2020-06-10 | 2020-06-16 | 138, 139 |  | Tester 2; Tester 3 | 80h | 3,040 |
| 141 | 5.5 | **Test networks** |  | 8d | 2020-05-28 | 2020-06-08 |  | 0d |  | 368h | 14,656 |
| 142 | 5.5.1 | Test security | manual | 7d | 2020-05-28 | 2020-06-05 | 78, 79, 80 |  | Tester 7; Testing Lead | 112h | 4,928 |
| 143 | 5.5.2 | Test reliability | manual | 5d | 2020-05-28 | 2020-06-03 | 78, 79, 80 |  | Tester 5; Tester 8 | 80h | 3,040 |
| 144 | 5.5.3 | **Test speed** |  | 8d | 2020-05-28 | 2020-06-08 |  | 0d |  | 128h | 4,864 |
| 145 | 5.5.3.1 | Test for bottlenecks in network | manual | 8d | 2020-05-28 | 2020-06-08 | 78, 79, 80 |  | Tester 3; Tester 4 | 128h | 4,864 |
| 146 | 5.5.4 | **Test volume capacity** |  | 3d | 2020-05-28 | 2020-06-01 |  | 0d |  | 48h | 1,824 |
| 147 | 5.5.4.1 | **Find network bandwidth limit** |  | 3d | 2020-05-28 | 2020-06-01 |  | 0d |  | 48h | 1,824 |
| 148 | 5.5.4.1.1 | Test reaction to network going beyond bandwidth limit | manual | 3d | 2020-05-28 | 2020-06-01 | 78, 79, 80 |  | Tester 2; Tester 1 | 48h | 1,824 |
| 149 | 5.6 | Integration Testing | manual | 70d | 2021-09-16 | 2021-12-22 | 119 |  | Testing Lead; Tester 1; Tester 2; Tester 3 | 2240h | 91,840 |
| 150 | 6 | **Deployment** |  | 340d | 2020-05-15 | 2021-09-02 |  | 0d |  | 128h | 3,712 |
| 151 | 6.1 | Setup host computer system | manual | 7d | 2020-06-17 | 2020-06-25 | 135, 136, 138, 139, 140 |  | Deployer 1 | 56h | 1,568 |
| 152 | 6.2 | Begin capturing car information from parking lot gates | milestone | 0d | 2021-09-02 | 2021-09-02 | 88 | 79d |  |  |  |
| 153 | 6.3 | Establish connection between UTD database and app database | manual | 7d | 2020-05-15 | 2020-05-25 | 128, 129, 130, 132 |  | Deployer 2 | 56h | 1,568 |
| 154 | 6.4 | **Launch app** |  | 1d | 2020-06-04 | 2020-06-04 |  | 0d |  | 16h | 576 |
| 155 | 6.4.1 | Release on Apple App Store | manual | 1d | 2020-06-04 | 2020-06-04 | 110, 111, 112, 114, 115, 117, 118 |  | Deployment Lead | 8h | 288 |
| 156 | 6.4.2 | Release on Google Play Store | manual | 1d | 2020-06-04 | 2020-06-04 | 110, 111, 112, 114, 115, 117, 118 |  | Deployment Lead | 8h | 288 |
