Schedule from MS Project, 2020-02-19 to 2022-01-20, costs in $.

## Calendars

- Standard: Mon-Fri 08:00-12:00, 13:00-17:00; Sat-Sun off.

## Resources

| Resource | Rate |
| --- | --- |
| Requirements Engineer Lead | 60 |
| Requirements Engineer 1 | 47 |
| Requirements Engineer 2 | 47 |
| Requirements Engineer 3 | 47 |
| Requirements Engineer 4 | 47 |
| Requirements Engineer 5 | 47 |
| Design Engineer Lead | 62 |
| Design Engineer 1 | 48 |
| Design Engineer 2 | 48 |
| Design Engineer 3 | 48 |
| Design Engineer 4 | 48 |
| Development Engineer Lead | 50 |
| Development Engineer 1 | 46 |
| Development Engineer 2 | 46 |
| Development Engineer 3 | 46 |
| Development Engineer 4 | 46 |
| Development Engineer 5 | 46 |
| Development Engineer 6 | 46 |
| Development Engineer 7 | 46 |
| Development Engineer 8 | 46 |
| Development Engineer 9 | 46 |
| Testing Engineer Lead | 51 |
| Testing Engineer 1 | 42 |
| Testing Engineer 2 | 42 |
| Testing Engineer 7 | 42 |
| Testing Engineer 8 | 42 |
| Testing Engineer 3 | 42 |
| Testing Engineer 9 | 42 |
| Testing Engineer 4 | 42 |
| Testing Engineer 10 | 42 |
| Testing Engineer 11 | 42 |
| Testing Engineer 5 | 42 |
| Testing Engineer 6 | 42 |
| Deployment Engineer Lead | 49 |
| Deployment Engineer 1 | 40 |
| Deployment Engineer 2 | 40 |
| Deployment Engineer 3 | 40 |
| Deployment Engineer 4 | 40 |
| Project Manager | 100 |
| Procurement Manager | 25 |
| Gate supplies | 900000 |
| Labor costs to build gate frames | 300000 |
| Labor costs to install RF sensors | 17000 |
| Testing Engineer 12 | 42 |

## Schedule

| ID | WBS | Task | Type | Duration | Start | Finish | Predecessors | Total slack | Resources | Work | Cost |
| --- | --- | --- | --- | --- | --- | --- | --- | --- | --- | --- | --- |
| 1 | 1 | **Project** |  | 2d? | 2020-02-19 | 2020-02-20 |  |  |  | 11192h | 1,738,328 |
| 2 | 1.1 | **Requirement** |  | 45d | 2020-02-19 | 2020-04-21 |  |  |  | 1640h | 87,504 |
| 3 | 1.1.1 | Create stakeholder map | manual | 2d | 2020-02-19 | 2020-02-20 |  |  | Requirements Engineer Lead; Project Manager | 32h | 2,560 |
| 4 | 1.1.2 | Create stakeholder analysis | manual | 3d | 2020-02-21 | 2020-02-25 | 3 |  | Requirements Engineer Lead | 24h | 1,440 |
| 5 | 1.1.3 | **Host Computer System Requirements** |  | 8d | 2020-02-19 | 2020-02-28 |  | 0d |  | 72h | 4,016 |
| 6 | 1.1.3.1 | Draft information sending requirements questions | manual | 2d | 2020-02-19 | 2020-02-20 |  |  | Requirements Engineer 1 | 16h | 752 |
| 7 | 1.1.3.2 | Draft data retrieval requirements questions | manual | 2d | 2020-02-21 | 2020-02-24 | 6 |  | Requirements Engineer 1 | 16h | 752 |
| 8 | 1.1.3.3 | Review all host computer system requirements questions | manual | 2d | 2020-02-25 | 2020-02-26 | 7 |  | Requirements Engineer 1; Requirements Engineer Lead | 16h | 856 |
| 9 | 1.1.3.4 | Finalize all host computer system requirements questions | manual | 2d | 2020-02-27 | 2020-02-28 | 8 |  | Requirements Engineer 1; Requirements Engineer Lead; Project Manager | 24h | 1,656 |
| 10 | 1.1.4 | **Server/back-end** |  | 11d | 2020-02-19 | 2020-03-04 |  | 0d |  | 120h | 6,800 |
| 11 | 1.1.4.1 | Draft security requirements questions | manual | 2d | 2020-02-19 | 2020-02-20 |  |  | Requirements Engineer 2 | 16h | 752 |
| 12 | 1.1.4.2 | Draft communication requirements questions | manual | 2d | 2020-02-21 | 2020-02-24 | 11 |  | Requirements Engineer 2 | 16h | 752 |
| 13 | 1.1.4.3 | Draft DB requirements questions | manual | 3d | 2020-02-25 | 2020-02-27 | 12 |  | Requirements Engineer 2 | 24h | 1,128 |
| 14 | 1.1.4.4 | Review all server/back-end requirements questions | manual | 1d | 2020-03-02 | 2020-03-02 | 11, 12, 13 |  | Requirements Engineer Lead; Requirements Engineer 2 | 16h | 856 |
| 15 | 1.1.4.5 | Finalize all server/back-end requirements questions | manual | 2d | 2020-03-03 | 2020-03-04 | 14 |  | Requirements Engineer 2; Requirements Engineer Lead; Project Manager | 48h | 3,312 |
| 16 | 1.1.5 | **Web interface** |  | 20d | 2020-02-19 | 2020-03-17 |  | 0d |  | 136h | 8,184 |
| 17 | 1.1.5.1 | Draft payment page requirements questions | manual | 1d | 2020-02-19 | 2020-02-19 |  |  | Testing Engineer 3 | 8h | 336 |
| 18 | 1.1.5.2 | Draft user authentication requirements questions | manual | 1d | 2020-02-20 | 2020-02-20 | 17 |  | Testing Engineer 3 | 8h | 336 |
| 19 | 1.1.5.3 | Draft parking map display requirements questions | manual | 2d | 2020-02-21 | 2020-02-24 | 18 |  | Testing Engineer 3 | 16h | 672 |
| 20 | 1.1.5.4 | Draft admin page requirements questions | manual | 1d | 2020-02-25 | 2020-02-25 | 19 |  | Requirements Engineer 3 | 8h | 376 |
| 21 | 1.1.5.5 | Review all web interface requirements questions | manual | 3d | 2020-02-26 | 2020-03-09 | 20, 17, 18, 19 |  | Requirements Engineer Lead; Testing Engineer 3 | 32h | 1,632 |
| 22 | 1.1.5.6 | Finalize all web interface requirements questions | manual | 4d | 2020-03-10 | 2020-03-17 | 21 |  | Requirements Engineer Lead; Testing Engineer 3; Project Manager | 64h | 4,832 |
| 23 | 1.1.6 | **Gate Hardware** |  | 4d | 2020-02-19 | 2020-02-24 |  | 0d |  | 40h | 2,144 |
| 24 | 1.1.6.1 | Draft gate dimensions requirements questions | manual | 1d | 2020-02-19 | 2020-02-19 |  |  | Testing Engineer 4 | 8h | 336 |
| 25 | 1.1.6.2 | Draft gate sensor requirement questions | manual | 1d | 2020-02-20 | 2020-02-20 | 24 |  | Testing Engineer 4 | 8h | 336 |
| 26 | 1.1.6.3 | Review all gate hardware requirements questions | manual | 1d | 2020-02-21 | 2020-02-21 | 25, 24 |  | Requirements Engineer Lead; Testing Engineer 4 | 8h | 336 |
| 27 | 1.1.6.4 | Finalize all gate hardware requirements questions | manual | 1d | 2020-02-24 | 2020-02-24 | 26 |  | Requirements Engineer Lead; Testing Engineer 4; Project Manager | 16h | 1,136 |

| ID | WBS | Task | Type | Duration | Start | Finish | Predecessors | Total slack | Resources | Work | Cost |
| --- | --- | --- | --- | --- | --- | --- | --- | --- | --- | --- | --- |
| 28 | 1.1.7 | **Mobile application** |  | 9d | 2020-02-19 | 2020-03-02 |  | 0d |  | 72h | 3,384 |
| 29 | 1.1.7.1 | Draft payment page requirements questions | manual | 1d | 2020-02-19 | 2020-02-19 |  |  | Requirements Engineer 5 | 8h | 376 |
| 30 | 1.1.7.2 | Draft filtering/display requirements questions | manual | 2d | 2020-02-20 | 2020-02-21 | 29 |  | Requirements Engineer 5 | 16h | 752 |
| 31 | 1.1.7.3 | Draft parking lot availability requirements questions | manual | 2d | 2020-02-24 | 2020-02-25 | 30 |  | Requirements Engineer 5 | 16h | 752 |
| 32 | 1.1.7.4 | Draft user authentication requirements questions | manual | 1d | 2020-02-26 | 2020-02-26 | 31 |  | Requirements Engineer 5 | 8h | 376 |
| 33 | 1.1.7.5 | Review all mobile application requirements questions | manual | 1d | 2020-02-27 | 2020-02-27 | 29, 30, 31, 32 |  | Requirements Engineer 5; Requirements Engineer Lead | 8h | 376 |
| 34 | 1.1.7.6 | Finalize all mobile application requirements questions | manual | 2d | 2020-02-28 | 2020-03-02 | 33 |  | Project Manager; Requirements Engineer 5; Requirements Engineer Lead | 16h | 752 |
| 35 | 1.1.8 | **UI/UX** |  | 5d | 2020-02-28 | 2020-03-05 |  | 0d |  | 40h | 2,408 |
| 36 | 1.1.8.1 | Draft UI/UX requirements questions | manual | 1d | 2020-02-28 | 2020-02-28 |  |  | Requirements Engineer 1 | 8h | 376 |
| 37 | 1.1.8.2 | Review UI/UX requirements questions | manual | 1d | 2020-03-02 | 2020-03-02 | 36 |  | Requirements Engineer 1; Requirements Engineer Lead | 8h | 376 |
| 38 | 1.1.8.3 | finalize UI/UX requirements questions | manual | 2d | 2020-03-03 | 2020-03-05 | 37 |  | Project Manager; Requirements Engineer 1; Requirements Engineer Lead | 24h | 1,656 |
| 39 | 1.1.9 | Hold interview with customer | manual | 14d | 2020-03-18 | 2020-04-06 | 3, 4, 9, 15, 22, 27, 34, 38 |  | Requirements Engineer 1; Requirements Engineer 2; Requirements Engineer 3; Requirements Engineer 4; Requirements Engineer 5; Requirements Engineer Lead | 672h | 33,040 |
| 40 | 1.1.10 | Create project requirements document | manual | 7d | 2020-04-07 | 2020-04-15 | 39 |  | Requirements Engineer 1; Requirements Engineer 2; Requirements Engineer 3; Requirements Engineer 4; Requirements Engineer 5; Requirements Engineer Lead | 336h | 16,520 |
| 41 | 1.1.11 | Review project requirements document | manual | 3d | 2020-04-16 | 2020-04-20 | 40 |  | Design Engineer Lead; Project Manager; Requirements Engineer Lead | 72h | 5,328 |
| 42 | 1.1.12 | Finalize project requirements document (milestone 01) | manual | 1d | 2020-04-21 | 2020-04-21 | 41 |  | Development Engineer Lead; Project Manager; Requirements Engineer Lead | 24h | 1,680 |
| 43 | 1.2 | **Design** |  | 46d | 2020-04-22 | 2020-06-24 |  | 0d |  | 936h | 47,288 |
| 44 | 1.2.1 | **UI/UX** |  | 13d | 2020-04-22 | 2020-05-08 |  | 0d |  | 208h | 10,432 |
| 45 | 1.2.1.1 | **Mobile application** |  | 9d | 2020-04-22 | 2020-05-04 |  | 0d |  | 72h | 3,456 |
| 46 | 1.2.1.1.1 | Draft payment page design | manual | 3d | 2020-04-22 | 2020-04-24 | 42 |  | Design Engineer 1 | 24h | 1,152 |
| 47 | 1.2.1.1.2 | Draft campus map display design | manual | 4d | 2020-04-27 | 2020-04-30 | 46 |  | Design Engineer 1 | 32h | 1,536 |
| 48 | 1.2.1.1.3 | Draft login/logout page design | manual | 2d | 2020-05-01 | 2020-05-04 | 47 |  | Design Engineer 1 | 16h | 768 |
| 49 | 1.2.1.2 | **Web page** |  | 5d | 2020-04-22 | 2020-04-28 |  | 0d |  | 40h | 1,920 |
| 50 | 1.2.1.2.1 | Draft payment page design | manual | 3d | 2020-04-22 | 2020-04-24 | 42 |  | Design Engineer 2 | 24h | 1,152 |
| 51 | 1.2.1.2.2 | Draft login/logout page design | manual | 2d | 2020-04-27 | 2020-04-28 | 50 |  | Design Engineer 2 | 16h | 768 |
| 52 | 1.2.1.3 | Review UI/UX design | manual | 3d | 2020-05-05 | 2020-05-07 | 46, 47, 48, 50, 51 |  | Design Engineer 1; Design Engineer 2; Design Engineer Lead | 72h | 3,792 |
| 53 | 1.2.1.4 | Finalize UI/UX design | manual | 1d | 2020-05-08 | 2020-05-08 | 52 |  | Design Engineer 1; Design Engineer 2; Design Engineer Lead | 24h | 1,264 |

| ID | WBS | Task | Type | Duration | Start | Finish | Predecessors | Total slack | Resources | Work | Cost |
| --- | --- | --- | --- | --- | --- | --- | --- | --- | --- | --- | --- |
| 54 | 1.2.2 | **Technical Design** |  | 33d | 2020-04-22 | 2020-06-05 |  | 0d |  | 584h | 28,368 |
| 55 | 1.2.2.1 | **Host computer system design** |  | 14d | 2020-04-22 | 2020-05-11 |  | 0d |  | 112h | 5,376 |
| 56 | 1.2.2.1.1 | Network connections design (App & Hardware) | manual | 7d | 2020-04-22 | 2020-04-30 | 42 |  | Design Engineer 3 | 56h | 2,688 |
| 57 | 1.2.2.1.2 | Real-time information updating design | manual | 7d | 2020-05-01 | 2020-05-11 | 56 |  | Design Engineer 3 | 56h | 2,688 |
| 58 | 1.2.2.2 | **Server/back-end design** |  | 21d | 2020-04-22 | 2020-05-20 |  | 0d |  | 168h | 8,064 |
| 59 | 1.2.2.2.1 | Design schema | manual | 14d | 2020-04-22 | 2020-05-11 | 42 |  | Design Engineer 4 | 112h | 5,376 |
| 60 | 1.2.2.2.2 | Design CRUD service applications | manual | 7d | 2020-05-12 | 2020-05-20 | 59 |  | Design Engineer 4 | 56h | 2,688 |
| 61 | 1.2.2.3 | **Gate hardware design** |  | 4d | 2020-05-11 | 2020-05-14 |  | 0d |  | 32h | 1,536 |
| 62 | 1.2.2.3.1 | Draft gate frame blueprint design | manual | 3d | 2020-05-11 | 2020-05-13 | 48, 53 |  | Design Engineer 1 | 24h | 1,152 |
| 63 | 1.2.2.3.2 | Design sensor and gate frame integration | manual | 1d | 2020-05-14 | 2020-05-14 | 62 |  | Design Engineer 1 | 8h | 384 |
| 64 | 1.2.2.4 | **Mobile application** |  | 13d | 2020-05-11 | 2020-05-27 |  | 0d |  | 104h | 4,992 |
| 65 | 1.2.2.4.1 | Network connection design (Host comp. & DB) | manual | 9d | 2020-05-11 | 2020-05-21 | 53 |  | Design Engineer 2 | 72h | 3,456 |
| 66 | 1.2.2.4.2 | Payment validation design | manual | 2d | 2020-05-22 | 2020-05-25 | 65 |  | Design Engineer 2 | 16h | 768 |
| 67 | 1.2.2.4.3 | User authentication design | manual | 2d | 2020-05-26 | 2020-05-27 | 66 |  | Design Engineer 2 | 16h | 768 |
| 68 | 1.2.2.5 | **Web page** |  | 9d | 2020-05-21 | 2020-06-02 |  | 0d |  | 112h | 5,376 |
| 69 | 1.2.2.5.1 | Network connection design (Host comp. & DB) | manual | 5d | 2020-05-21 | 2020-05-27 | 53, 57, 60 |  | Design Engineer 3; Design Engineer 4 | 80h | 3,840 |
| 70 | 1.2.2.5.2 | Payment validation design | manual | 2d | 2020-05-28 | 2020-05-29 | 69 |  | Design Engineer 3 | 16h | 768 |
| 71 | 1.2.2.5.3 | User authentication design | manual | 2d | 2020-06-01 | 2020-06-02 | 70 |  | Design Engineer 3 | 16h | 768 |
| 72 | 1.2.2.6 | Review technical design | manual | 2d | 2020-06-03 | 2020-06-04 | 57, 60, 63, 67, 71 |  | Design Engineer Lead | 16h | 992 |
| 73 | 1.2.2.7 | Finalize technical design | manual | 1d | 2020-06-05 | 2020-06-05 | 72 |  | Design Engineer 1; Design Engineer 2; Design Engineer 3; Design Engineer 4; Design Engineer Lead | 40h | 2,032 |
| 74 | 1.2.3 | Draft final design document | manual | 10d | 2020-06-08 | 2020-06-19 | 73 |  | Development Engineer Lead | 80h | 4,000 |
| 75 | 1.2.4 | Review design document | manual | 2d | 2020-06-22 | 2020-06-23 | 74 |  | Development Engineer Lead; Project Manager | 32h | 2,400 |
| 76 | 1.2.5 | Finalize design document (milestone 02) | manual | 1d | 2020-06-24 | 2020-06-24 | 75 |  | Design Engineer Lead; Development Engineer Lead; Project Manager; Deployment Engineer Lead | 32h | 2,088 |
| 77 | 1.3 | **Development** |  | 313d | 2020-06-25 | 2021-09-06 |  | 0d |  | 3384h | 1,374,960 |
| 78 | 1.3.1 | **Host computer system** |  | 14d | 2020-06-25 | 2020-07-14 |  | 0d |  | 656h | 30,176 |
| 79 | 1.3.1.1 | Build network connection to mobile app | manual | 14d | 2020-06-25 | 2020-07-14 | 76 |  | Development Engineer 1; Development Engineer 2 | 224h | 10,304 |
| 80 | 1.3.1.2 | Build network connection to gate hardware | manual | 14d | 2020-06-25 | 2020-07-14 | 76 |  | Development Engineer 3; Development Engineer 4 | 224h | 10,304 |
| 81 | 1.3.1.3 | Build real-time updating system | manual | 9d | 2020-06-25 | 2020-07-07 | 76 |  | Development Engineer 5; Development Engineer 6 | 144h | 6,624 |
| 82 | 1.3.1.4 | Install OS | manual | 2d | 2020-06-25 | 2020-06-26 | 76 |  | Development Engineer 7 | 16h | 736 |
| 83 | 1.3.1.5 | Develop data encryption | manual | 3d | 2020-06-25 | 2020-06-29 | 76 |  | Development Engineer 8; Development Engineer 9 | 48h | 2,208 |

| ID | WBS | Task | Type | Duration | Start | Finish | Predecessors | Total slack | Free slack | Resources | Work | Cost |
| --- | --- | --- | --- | --- | --- | --- | --- | --- | --- | --- | --- | --- |
| 84 | 1.3.2 | **Gate hardware** |  | 279d | 2020-06-25 | 2021-07-20 |  | 0d |  |  | 16h | 1,217,400 |
| 85 | 1.3.2.1 | Order materials to build gate frame | manual | 2d | 2020-06-25 | 2020-06-26 | 76 |  |  | Procurement Manager | 16h | 400 |
| 86 | 1.3.2.2 | Build gate frame and RF sensor at every parking lot entrance | manual | 270d | 2020-06-29 | 2021-07-09 | 85 |  |  | Gate supplies; Labor costs to build gate frames |  | 1,200,000 |
| 87 | 1.3.2.3 | Install RF sensors onto gate frame | manual | 7d | 2021-07-12 | 2021-07-20 | 86 |  |  | Labor costs to install RF sensors |  | 17,000 |
| 88 | 1.3.3 | **Database** |  | 55d | 2020-07-15 | 2020-09-29 |  | 0d |  |  | 1240h | 57,040 |
| 89 | 1.3.3.1 | Install DBMS | manual | 5d | 2020-07-15 | 2020-07-21 | 76, 79 |  |  | Development Engineer 1 | 40h | 1,840 |
| 90 | 1.3.3.2 | Build schema | manual | 30d | 2020-07-22 | 2020-09-01 | 89, 79, 80 |  |  | Development Engineer 2; Development Engineer 3; Development Engineer 4 | 720h | 33,120 |
| 91 | 1.3.3.3 | Build service tier applications | manual | 20d | 2020-09-02 | 2020-09-29 | 90, 81, 82 |  |  | Development Engineer 5; Development Engineer 6; Development Engineer 7 | 480h | 22,080 |
| 92 | 1.3.4 | **Mobile application** |  | 89d | 2020-06-25 | 2020-10-27 |  | 0d |  |  | 928h | 43,104 |
| 93 | 1.3.4.1 | **Front-end** |  | 51d | 2020-06-30 | 2020-09-08 |  | 0d |  |  | 400h | 18,400 |
| 94 | 1.3.4.1.1 | Program UTD campus map display | manual | 12d | 2020-06-30 | 2020-08-11 | 76, 83 |  |  | Development Engineer 9 | 96h | 4,416 |
| 95 | 1.3.4.1.2 | Program real-time updating map display | manual | 14d | 2020-08-12 | 2020-08-31 | 76, 94 |  |  | Development Engineer 8; Development Engineer 9 | 224h | 10,304 |
| 96 | 1.3.4.1.3 | Program login/logout pages GUI |  | 5d | 2020-09-02 | 2020-09-08 | 76, 90 | 201d | 0d | Development Engineer 2 | 40h | 1,840 |
| 97 | 1.3.4.1.4 | Program payment pages GUI |  | 5d | 2020-07-22 | 2020-07-28 | 76, 89 | 369d |  | Development Engineer 1 | 40h | 1,840 |
| 98 | 1.3.4.2 | **Back-end** |  | 89d | 2020-06-25 | 2020-10-27 |  | 0d |  |  | 528h | 24,704 |
| 99 | 1.3.4.2.1 | Connect to"Google Maps" to pull image of UTD campus map | manual | 13d | 2020-07-08 | 2020-07-29 | 76, 81 |  |  | Development Engineer 6 | 104h | 4,784 |
| 100 | 1.3.4.2.2 | Create network connection to host computer system | manual | 20d | 2020-09-30 | 2020-10-27 | 76, 90, 91 |  |  | Development Engineer 4; Development Engineer 7 | 320h | 14,720 |
| 101 | 1.3.4.2.3 | Program transaction validator | manual | 7d | 2020-06-25 | 2020-07-03 | 76 |  |  | Development Engineer Lead | 56h | 2,800 |
| 102 | 1.3.4.2.4 | Program user authentication procedure | manual | 6d | 2020-07-13 | 2020-07-20 | 101 |  |  | Development Engineer Lead | 48h | 2,400 |
| 103 | 1.3.5 | **Web page** |  | 51d | 2020-06-29 | 2020-09-07 |  | 0d |  |  | 152h | 6,992 |
| 104 | 1.3.5.1 | **Front-end** |  | 19d | 2020-07-08 | 2020-08-03 |  | 0d |  |  | 64h | 2,944 |
| 105 | 1.3.5.1.1 | Program login/logout pages | manual | 5d | 2020-07-08 | 2020-07-14 | 76, 81 |  |  | Development Engineer 5 | 40h | 1,840 |
| 106 | 1.3.5.1.2 | Program payment pages | manual | 3d | 2020-07-30 | 2020-08-03 | 76, 81, 99 |  |  | Development Engineer 6 | 24h | 1,104 |
| 107 | 1.3.5.2 | **Back-end** |  | 51d | 2020-06-29 | 2020-09-07 |  | 0d |  |  | 88h | 4,048 |
| 108 | 1.3.5.2.1 | Program transaction validator | manual | 5d | 2020-09-01 | 2020-09-07 | 76, 95 |  |  | Development Engineer 9 | 40h | 1,840 |
| 109 | 1.3.5.2.2 | Program user authentication procedure | manual | 6d | 2020-06-29 | 2020-07-06 | 76, 82 |  |  | Development Engineer 7 | 48h | 2,208 |
| 110 | 1.3.6 | Draft final development document | manual | 12d | 2021-08-12 | 2021-08-31 | 103, 92, 88, 84, 78 |  |  | Development Engineer 1; Development Engineer 5; Development Engineer 7; Development Engineer Lead | 320h | 15,040 |
| 111 | 1.3.7 | Review development document | manual | 3d | 2021-09-01 | 2021-09-03 | 110 |  |  | Development Engineer Lead; Project Manager | 48h | 3,600 |
| 112 | 1.3.8 | Finalize development (milestone 03) | manual | 1d | 2021-09-06 | 2021-09-06 | 111 |  |  | Development Engineer Lead; Project Manager; Testing Engineer Lead | 24h | 1,608 |

| ID | WBS | Task | Type | Duration | Start | Finish | Predecessors | Total slack | Resources | Work | Cost |
| --- | --- | --- | --- | --- | --- | --- | --- | --- | --- | --- | --- |
| 113 | 1.4 | **Testing** |  | 327d | 2020-06-29 | 2021-09-28 |  | 0d |  | 3408h | 150,392 |
| 114 | 1.4.1 | **Test mobile application** |  | 60d | 2020-07-06 | 2020-09-25 |  | 0d |  | 424h | 18,528 |
| 115 | 1.4.1.1 | Test UTD map display | manual | 7d | 2020-08-12 | 2020-08-20 | 94 |  | Testing Engineer 1 | 56h | 2,352 |
| 116 | 1.4.1.2 | Test colored parking spot availability | manual | 7d | 2020-09-01 | 2020-09-09 | 95 |  | Testing Engineer 2 | 56h | 2,352 |
| 117 | 1.4.1.3 | Test real-time parking lot updating | manual | 7d | 2020-09-01 | 2020-09-09 | 95 |  | Testing Engineer 3 | 56h | 2,352 |
| 118 | 1.4.1.4 | **Test login/logout pages** |  | 39d | 2020-07-21 | 2020-09-11 |  | 0d |  | 64h | 2,688 |
| 119 | 1.4.1.4.1 | Test user authentication | manual | 3d | 2020-09-09 | 2020-09-11 | 96 |  | Testing Engineer 4 | 24h | 1,008 |
| 120 | 1.4.1.4.2 | Test user data encryption | manual | 5d | 2020-07-21 | 2020-07-27 | 102 |  | Testing Engineer 5 | 40h | 1,680 |
| 121 | 1.4.1.5 | **Test payment page** |  | 19d | 2020-07-06 | 2020-07-30 |  | 0d |  | 112h | 4,704 |
| 122 | 1.4.1.5.1 | Test payment validity | manual | 8d | 2020-07-06 | 2020-07-15 | 101 |  | Testing Engineer 6 | 64h | 2,688 |
| 123 | 1.4.1.5.2 | Test payment data encryption | manual | 6d | 2020-07-23 | 2020-07-30 | 122 |  | Testing Engineer 6 | 48h | 2,016 |
| 124 | 1.4.1.6 | Mobile application regression testing | manual | 10d | 2020-09-14 | 2020-09-25 | 115, 116, 117, 119, 120, 123 |  | Testing Engineer Lead | 80h | 4,080 |
| 125 | 1.4.2 | **Test gate hardware** |  | 26d | 2021-07-12 | 2021-08-16 |  | 0d |  | 312h | 13,104 |
| 126 | 1.4.2.1 | **Test RF sensors** |  | 19d | 2021-07-21 | 2021-08-16 |  | 0d |  | 88h | 3,696 |
| 127 | 1.4.2.1.1 | Test RF sensor accuracy of determining parking pass color | manual | 5d | 2021-07-21 | 2021-07-27 | 87 |  | Testing Engineer 7 | 40h | 1,680 |
| 128 | 1.4.2.1.2 | Test RF sensor speed of determining parking pass color | manual | 3d | 2021-07-21 | 2021-07-23 | 87 |  | Testing Engineer 8 | 24h | 1,008 |
| 129 | 1.4.2.1.3 | Test data transmission speed over network | manual | 3d | 2021-08-12 | 2021-08-16 |  |  | Testing Engineer 9 | 24h | 1,008 |
| 130 | 1.4.2.2 | **Test gate frames** |  | 14d | 2021-07-12 | 2021-07-29 |  | 0d |  | 224h | 9,408 |
| 131 | 1.4.2.2.1 | Test sturdiness | manual | 12d | 2021-07-12 | 2021-07-27 | 86 |  | Testing Engineer 11; Testing Engineer 12 | 192h | 8,064 |
| 132 | 1.4.2.2.2 | Test vision impairment severity | manual | 2d | 2021-07-28 | 2021-07-29 | 131 |  | Testing Engineer 11; Testing Engineer 12 | 32h | 1,344 |
| 133 | 1.4.3 | **Test database/back-end** |  | 79d | 2020-07-31 | 2020-11-18 |  | 0d |  | 552h | 23,904 |
| 134 | 1.4.3.1 | Test data accuracy of incoming data | manual | 4d | 2020-10-28 | 2020-11-02 | 89, 90, 91, 100 |  | Testing Engineer 10 | 32h | 1,344 |
| 135 | 1.4.3.2 | Test response time to queries | manual | 2d | 2020-10-28 | 2020-10-29 | 89, 90, 91, 100 |  | Testing Engineer 12 | 16h | 672 |
| 136 | 1.4.3.3 | Test data integrity percentages | manual | 2d | 2020-10-28 | 2020-10-29 | 89, 90, 91, 100, 115 |  | Testing Engineer 1 | 16h | 672 |
| 137 | 1.4.3.4 | Test DBMS security | manual | 15d | 2020-07-31 | 2020-08-20 | 89, 123, 122 |  | Testing Engineer 5; Testing Engineer 6; Testing Engineer 7 | 360h | 15,120 |
| 138 | 1.4.3.5 | Test connectivity between UTD database and app database | manual | 6d | 2020-10-28 | 2020-11-04 | 100 |  | Testing Engineer 8 | 48h | 2,016 |
| 139 | 1.4.3.6 | Database/back-end regression testing | manual | 10d | 2020-11-05 | 2020-11-18 | 124, 134, 135, 136, 137, 138 |  | Testing Engineer Lead | 80h | 4,080 |

| ID | WBS | Task | Type | Duration | Start | Finish | Predecessors | Total slack | Free slack | Resources | Work | Cost |
| --- | --- | --- | --- | --- | --- | --- | --- | --- | --- | --- | --- | --- |
| 140 | 1.4.4 | **Test host computer system** |  | 112d | 2020-06-29 | 2020-12-01 |  | 0d |  |  | 728h | 32,952 |
| 141 | 1.4.4.1 | **Test security of host computer system** |  | 24d | 2020-06-29 | 2020-07-30 |  | 0d |  |  | 576h | 25,920 |
| 142 | 1.4.4.1.1 | Test OS security | manual | 12d | 2020-06-29 | 2020-07-14 | 82 |  |  | Testing Engineer 11; Testing Engineer 12; Testing Engineer Lead | 288h | 12,960 |
| 143 | 1.4.4.1.2 | Test network security | manual | 12d | 2020-07-15 | 2020-07-30 | 79, 80 |  |  | Testing Engineer 7; Testing Engineer 8; Testing Engineer Lead | 288h | 12,960 |
| 144 | 1.4.4.2 | **Test repsonse times to queries** |  | 3d | 2020-07-15 | 2020-07-17 |  | 0d |  |  | 40h | 1,680 |
| 145 | 1.4.4.2.1 | Test average time responding to mobile app query | manual | 2d | 2020-07-15 | 2020-07-16 | 79 |  |  | Testing Engineer 3 | 16h | 672 |
| 146 | 1.4.4.2.2 | Test average time responding to gate hardware data | manual | 3d | 2020-07-15 | 2020-07-17 | 80 |  |  | Testing Engineer 4 | 24h | 1,008 |
| 147 | 1.4.4.3 | Test data integrity | manual | 5d | 2020-07-31 | 2020-08-06 | 79, 80 |  |  | Testing Engineer 8 | 40h | 1,680 |
| 148 | 1.4.4.4 | Host computer system regression testing | manual | 9d | 2020-11-19 | 2020-12-01 | 142, 143, 145, 146, 147, 139 |  |  | Testing Engineer Lead | 72h | 3,672 |
| 149 | 1.4.5 | **Test networks** |  | 111d | 2020-07-15 | 2020-12-16 |  | 0d |  |  | 360h | 15,912 |
| 150 | 1.4.5.1 | Test security | manual | 12d | 2020-07-15 | 2020-07-30 | 79, 80 |  |  | Testing Engineer 1; Testing Engineer 2 | 192h | 8,064 |
| 151 | 1.4.5.2 | Test reliability | manual | 4d | 2020-07-15 | 2020-07-20 | 79, 80 |  |  | Testing Engineer 9 | 32h | 1,344 |
| 152 | 1.4.5.3 | **Test speed** |  | 3d | 2020-07-15 | 2020-07-17 |  | 0d |  |  | 24h | 1,008 |
| 153 | 1.4.5.3.1 | Test for bottlenecks in network | manual | 3d | 2020-07-15 | 2020-07-17 | 79, 80 |  |  | Testing Engineer 12 | 24h | 1,008 |
| 154 | 1.4.5.4 | **Test volume capacity** |  | 3d | 2020-07-16 | 2020-07-20 |  | 2d |  |  | 24h | 1,008 |
| 155 | 1.4.5.4.1 | Find network bandwidth limit |  | 2d | 2020-07-16 | 2020-07-17 | 79, 80, 122 | 269d | 0d | Testing Engineer 6 | 16h | 672 |
| 156 | 1.4.5.4.2 | Test reaction to network going beyond bandwidth limit | manual | 1d | 2020-07-20 | 2020-07-20 | 79, 80, 122, 155 |  |  | Testing Engineer 6 | 8h | 336 |
| 157 | 1.4.5.5 | Network regression testing | manual | 11d | 2020-12-02 | 2020-12-16 | 150, 151, 153, 155, 156, 148 |  |  | Testing Engineer Lead | 88h | 4,488 |
| 158 | 1.4.6 | Defect testing | manual | 20d | 2021-08-17 | 2021-09-13 | 124, 139, 148, 157, 127, 128, 129, 131, 132 |  |  | Testing Engineer 1; Testing Engineer 4; Testing Engineer 8; Testing Engineer 10; Testing Engineer 7 | 800h | 33,600 |
| 159 | 1.4.7 | Draft final testing document | manual | 7d | 2021-09-14 | 2021-09-22 | 158 |  |  | Testing Engineer 11; Testing Engineer 12; Testing Engineer Lead | 168h | 7,560 |
| 160 | 1.4.8 | Review testing document | manual | 3d | 2021-09-23 | 2021-09-27 | 159 |  |  | Project Manager; Testing Engineer Lead | 48h | 3,624 |
| 161 | 1.4.9 | Finalize testing (milestone 04) | manual | 1d | 2021-09-28 | 2021-09-28 | 160 |  |  | Project Manager; Testing Engineer Lead | 16h | 1,208 |
| 162 | 1.5 | **Deployment** |  | 113d | 2021-08-17 | 2022-01-20 |  | 0d |  |  | 1824h | 78,184 |
| 163 | 1.5.1 | Setup host computer system | manual | 20d | 2021-09-29 | 2021-10-26 | 161 |  |  | Deployment Engineer 1; Deployment Engineer 2 | 320h | 12,800 |
| 164 | 1.5.2 | Begin capturing car information from parking lot gates | manual | 1d | 2021-08-17 | 2021-08-17 | 127, 128, 129, 131, 132 |  |  | Deployment Engineer Lead | 8h | 392 |
| 165 | 1.5.3 | Launch database | manual | 3d | 2021-09-29 | 2021-10-01 | 161 |  |  | Deployment Engineer 4 | 24h | 960 |
| 166 | 1.5.4 | Establish connection between UTD database and app database | manual | 2d | 2021-09-29 | 2021-09-30 | 161 |  |  | Deployment Engineer 3 | 16h | 640 |
| 167 | 1.5.5 | Open network ports/sockets | manual | 10d | 2021-10-01 | 2021-11-24 | 161 |  |  | Deployment Engineer 3; Deployment Engineer 4 | 112h | 4,480 |
| 168 | 1.5.6 | Connect system components | manual | 27d | 2021-11-25 | 2022-01-20 | 167 |  |  | Deployment Engineer 1; Deployment Engineer 2; Deployment Engineer 3; Deployment Engineer 4; Deployment Engineer Lead | 560h | 23,408 |

| ID | WBS | Task | Type | Duration | Start | Finish | Predecessors | Total slack | Resources | Work | Cost |
| --- | --- | --- | --- | --- | --- | --- | --- | --- | --- | --- | --- |
| 169 | 1.5.7 | **Launch app** |  | 2d | 2021-09-29 | 2021-09-30 |  | 0d |  | 16h | 784 |
| 170 | 1.5.7.1 | Release on Apple App Store | manual | 1d | 2021-09-29 | 2021-09-29 | 161 |  | Deployment Engineer Lead | 8h | 392 |
| 171 | 1.5.7.2 | Release on Google Play Store | manual | 1d | 2021-09-30 | 2021-09-30 | 170 |  | Deployment Engineer Lead | 8h | 392 |
| 172 | 1.5.8 | Train client on system | manual | 17d | 2021-10-27 | 2021-11-24 | 166, 170, 171, 163, 164, 165 |  | Deployment Engineer 1; Deployment Engineer 2; Deployment Engineer 3; Deployment Engineer 4; Deployment Engineer Lead; Development Engineer Lead | 672h | 29,008 |
| 173 | 1.5.9 | Draft final deployment document | manual | 3d | 2021-12-15 | 2021-12-17 | 163, 164, 165, 166, 170, 171, 172 |  | Deployment Engineer 4; Deployment Engineer Lead | 48h | 2,136 |
| 174 | 1.5.10 | Review deployment document | manual | 2d | 2021-12-20 | 2021-12-21 | 173 |  | Deployment Engineer Lead; Project Manager | 32h | 2,384 |
| 175 | 1.5.11 | Finalize deployment (milestone 05) | manual | 1d | 2021-12-22 | 2021-12-22 | 174 |  | Deployment Engineer Lead; Project Manager | 16h | 1,192 |
