Schedule from MS Project, 2020-02-19 to 2021-02-02, costs in $, A marks actual dates.

## Calendars

- Standard: Mon-Fri 08:00-12:00, 13:00-17:00; Sat-Sun off.

## Resources

| Resource | Rate |
| --- | --- |
| Requirements Engineer Lead | 110 |
| Requirements Engineer 1 | 95 |
| Requirements Engineer 2 | 95 |
| Requirements Engineer 3 | 95 |
| Requirements Engineer 4 | 95 |
| Requirements Engineer 5 | 95 |
| Design Engineer Lead | 125 |
| Design Engineer 1 | 105 |
| Design Engineer 2 | 105 |
| Design Engineer 3 | 105 |
| Design Engineer 4 | 105 |
| Development Engineer Lead | 160 |
| Development Engineer 1 | 135 |
| Development Engineer 2 | 135 |
| Development Engineer 3 | 135 |
| Development Engineer 4 | 135 |
| Development Engineer 5 | 135 |
| Development Engineer 6 | 135 |
| Development Engineer 7 | 135 |
| Development Engineer 8 | 135 |
| Development Engineer 9 | 135 |
| Testing Engineer Lead | 142 |
| Testing Engineer 1 | 102 |
| Testing Engineer 2 | 102 |
| Testing Engineer 3 | 102 |
| Testing Engineer 4 | 102 |
| Testing Engineer 5 | 102 |
| Testing Engineer 6 | 102 |
| Testing Engineer 7 | 102 |
| Testing Engineer 8 | 102 |
| Testing Engineer 9 | 102 |
| Testing Engineer 10 | 102 |
| Testing Engineer 11 | 102 |
| Testing Engineer 12 | 102 |
| Deployment Engineer Lead | 103 |
| Deployment Engineer 1 | 92 |
| Deployment Engineer 2 | 92 |
| Deployment Engineer 3 | 92 |
| Deployment Engineer 4 | 92 |
| Project Manager | 250 |
| Design Engineer 5 | 105 |

## Schedule

| ID | WBS | Task | Duration | Start | Finish | Predecessors | Complete | Remaining | Total slack | Resources | Work | Actual work | Cost | Actual cost |
| --- | --- | --- | --- | --- | --- | --- | --- | --- | --- | --- | --- | --- | --- | --- |
| 1 | 1 | **Project** | 250d | 2020-02-19 A | 2021-02-02 |  | 6% | 235.3d | 0d |  | 7051.04h | 201.65h | 821,234.8 | 19,220.08 |
| 2 | 1.1 | **Requirement** | 31d | 2020-02-19 A | 2020-04-01 |  | 64% | 11.3d | 0d |  | 1102.64h | 201.65h | 117,818.8 | 19,220.08 |
| 3 | 1.1.1 | Create stakeholder map | 2d | 2020-02-19 A | 2020-02-20 A |  | 100% |  |  | Requirements Engineer Lead [50%] | 8h | 8h | 880 | 880 |
| 4 | 1.1.2 | Create stakeholder analysis | 3d | 2020-02-19 A | 2020-02-21 A |  | 100% |  |  | Requirements Engineer Lead [50%] | 12h | 12h | 880 | 880 |
| 5 | 1.1.3 | **Host Computer System Requirements** | 5d | 2020-02-19 A | 2020-02-25 A |  | 100% |  |  |  | 43.2h | 43.2h | 4,152 | 4,152 |
| 6 | 1.1.3.1 | Draft network requirement questions | 1d | 2020-02-19 A | 2020-02-19 A |  | 100% |  |  | Requirements Engineer 1 [25%] | 2h | 2h | 190 | 190 |
| 7 | 1.1.3.2 | Draft real-time updating requirements questions | 1d | 2020-02-19 A | 2020-02-19 A |  | 100% |  |  | Requirements Engineer 1 [25%] | 2h | 2h | 190 | 190 |
| 8 | 1.1.3.3 | Draft OS requirements questions | 1d | 2020-02-19 A | 2020-02-19 A |  | 100% |  |  | Requirements Engineer 1 [25%] | 2h | 2h | 190 | 190 |
| 9 | 1.1.3.4 | Draft data encryption requirements questions | 1d | 2020-02-19 A | 2020-02-19 A |  | 100% |  |  | Requirements Engineer 1 [25%] | 2h | 2h | 190 | 190 |
| 10 | 1.1.3.5 | Review all host computer system requirements questions | 2d | 2020-02-20 A | 2020-02-21 A | 6, 7, 8 | 100% |  |  | Requirements Engineer 1 | 16h | 16h | 1,520 | 1,520 |
| 11 | 1.1.3.6 | Finalize all host computer system requirements questions | 2d | 2020-02-24 A | 2020-02-25 A | 10, 3, 4 | 100% |  |  | Requirements Engineer 1; Requirements Engineer Lead [20%] | 19.2h | 19.2h | 1,872 | 1,872 |
| 12 | 1.1.4 | **Server/back-end** | 5d | 2020-02-19 A | 2020-02-25 A |  | 100% |  |  |  | 35.6h | 35.6h | 3,406 | 3,406 |
| 13 | 1.1.4.1 | Draft DB schema requirements questions | 1d | 2020-02-19 A | 2020-02-19 A |  | 100% |  |  | Requirements Engineer 2 [25%] | 2h | 2h | 190 | 190 |
| 14 | 1.1.4.2 | Draft DB security requirements questions | 1d | 2020-02-19 A | 2020-02-19 A |  | 100% |  |  | Requirements Engineer 2 [25%] | 2h | 2h | 190 | 190 |
| 15 | 1.1.4.3 | Draft DB applications requirements questions | 1d | 2020-02-19 A | 2020-02-19 A |  | 100% |  |  | Requirements Engineer 2 [25%] | 2h | 2h | 190 | 190 |
| 16 | 1.1.4.4 | Draft DBMS requirements questions | 2d | 2020-02-19 A | 2020-02-20 A |  | 100% |  |  | Requirements Engineer 2 [25%] | 4h | 4h | 380 | 380 |
| 17 | 1.1.4.5 | Review all server/back-end requirements questions | 2d | 2020-02-21 A | 2020-02-24 A | 13, 14, 15, 16 | 100% |  |  | Requirements Engineer 2 | 16h | 16h | 1,520 | 1,520 |
| 18 | 1.1.4.6 | Finalize all server/back-end requirements questions | 1d | 2020-02-25 A | 2020-02-25 A | 17, 3, 4 | 100% |  |  | Requirements Engineer 2; Requirements Engineer Lead [20%] | 9.6h | 9.6h | 936 | 936 |
| 19 | 1.1.5 | **Web page** | 6d | 2020-02-19 A | 2020-02-26 |  | 97% | 0.17d | 0d |  | 35.2h | 33.09h | 3,392 | 3,186.08 |
| 20 | 1.1.5.1 | Draft login/logout page requirements questions | 1d | 2020-02-19 A | 2020-02-19 A |  | 100% |  |  | Requirements Engineer 3 [20%] | 1.6h | 1.6h | 152 | 152 |
| 21 | 1.1.5.2 | Draft payment page requirements questions | 1d | 2020-02-19 A | 2020-02-19 A |  | 100% |  |  | Requirements Engineer 3 [20%] | 1.6h | 1.6h | 152 | 152 |
| 22 | 1.1.5.3 | Draft user authentication requirements questions | 1d | 2020-02-19 A | 2020-02-19 A |  | 100% |  |  | Requirements Engineer 3 [20%] | 1.6h | 1.6h | 152 | 152 |
| 23 | 1.1.5.4 | Draft payment validation requirement questions | 1d | 2020-02-19 A | 2020-02-19 A |  | 100% |  |  | Requirements Engineer 3 [20%] | 1.6h | 1.6h | 152 | 152 |
| 24 | 1.1.5.5 | Draft admin page requirements questions | 1d | 2020-02-19 A | 2020-02-19 A |  | 100% |  |  | Requirements Engineer 3 [20%] | 1.6h | 1.6h | 152 | 152 |
| 25 | 1.1.5.6 | Review all web interface requirements questions | 1d | 2020-02-20 A | 2020-02-20 A | 20, 21, 22, 23, 24 | 100% |  |  | Requirements Engineer 3 | 8h | 8h | 760 | 760 |
| 26 | 1.1.5.7 | Finalize all web interface requirements questions | 2d | 2020-02-25 A | 2020-02-26 | 3, 4, 17 | 89% | 0.22d | 0d | Requirements Engineer 3; Requirements Engineer Lead [20%] | 19.2h | 17.09h | 1,872 | 1,666.08 |

| ID | WBS | Task | Duration | Start | Finish | Predecessors | Complete | Remaining | Total slack | Free slack | Resources | Work | Actual work | Cost | Actual cost |
| --- | --- | --- | --- | --- | --- | --- | --- | --- | --- | --- | --- | --- | --- | --- | --- |
| 27 | 1.1.6 | **Mobile application** | 5d | 2020-02-19 A | 2020-02-25 |  | 99% | 0.05d | 1d |  |  | 37.44h | 36.48h | 3,604.8 | 3,511.2 |
| 28 | 1.1.6.1 | Draft UTD map display requirements questions | 1d | 2020-02-19 A | 2020-02-19 A |  | 100% |  |  |  | Requirements Engineer 4 [16%] | 1.28h | 1.28h | 121.6 | 121.6 |
| 29 | 1.1.6.2 | Draft payment Page requirements questions | 1d | 2020-02-19 A | 2020-02-19 A |  | 100% |  |  |  | Requirements Engineer 4 [16%] | 1.28h | 1.28h | 121.6 | 121.6 |
| 30 | 1.1.6.3 | Draft user authentication requirements questions | 1d | 2020-02-19 A | 2020-02-19 A |  | 100% |  |  |  | Requirements Engineer 4 [16%] | 1.28h | 1.28h | 121.6 | 121.6 |
| 31 | 1.1.6.4 | Draft payment validation requirement questions | 1d | 2020-02-19 A | 2020-02-19 A |  | 100% |  |  |  | Requirements Engineer 4 [16%] | 1.28h | 1.28h | 121.6 | 121.6 |
| 32 | 1.1.6.5 | Draft real-time updating requirements questions | 2d | 2020-02-19 A | 2020-02-20 A |  | 100% |  |  |  | Requirements Engineer 4 [16%] | 2.56h | 2.56h | 243.2 | 243.2 |
| 33 | 1.1.6.6 | Draft login/logout page requirements questions | 2d | 2020-02-19 A | 2020-02-20 A |  | 100% |  |  |  | Requirements Engineer 4 [16%] | 2.56h | 2.56h | 243.2 | 243.2 |
| 34 | 1.1.6.7 | Review all mobile application requirements questions | 1d | 2020-02-21 A | 2020-02-21 A | 28, 29, 30, 31, 32, 33 | 100% |  |  |  | Requirements Engineer 4 | 8h | 8h | 760 | 760 |
| 35 | 1.1.6.8 | Finalize all mobile application requirements questions | 2d | 2020-02-24 A | 2020-02-25 | 34, 3, 4 | 95% | 0.1d | 1d |  | Requirements Engineer 4; Requirements Engineer Lead [20%] | 19.2h | 18.24h | 1,872 | 1,778.4 |
| 36 | 1.1.7 | **UI/UX** | 5d | 2020-02-19 A | 2020-02-25 |  | 96% | 0.2d | 1d |  |  | 35.2h | 33.28h | 3,392 | 3,204.8 |
| 37 | 1.1.7.1 | Draft UI/UX mobile application UI/UX requirements questions | 1d | 2020-02-19 A | 2020-02-19 A |  | 100% |  |  |  | Requirements Engineer 5 [50%] | 4h | 4h | 380 | 380 |
| 38 | 1.1.7.2 | Draft UI/UX web page UI/UX requirements questions | 1d | 2020-02-19 A | 2020-02-19 A |  | 100% |  |  |  | Requirements Engineer 5 [50%] | 4h | 4h | 380 | 380 |
| 39 | 1.1.7.3 | Review UI/UX requirements questions | 1d | 2020-02-20 A | 2020-02-20 A | 37, 38 | 100% |  |  |  | Requirements Engineer 5 | 8h | 8h | 760 | 760 |
| 40 | 1.1.7.4 | finalize UI/UX requirements questions | 2d | 2020-02-24 A | 2020-02-25 | 3, 4, 39 | 90% | 0.2d | 1d |  | Requirements Engineer 5; Requirements Engineer Lead [20%] | 19.2h | 17.28h | 1,872 | 1,684.8 |
| 41 | 1.1.8 | Hold interview with customer | 14d | 2020-02-27 | 2020-03-17 | 40, 35, 26, 18, 11 |  |  | 0d |  | Requirements Engineer 1; Requirements Engineer 2; Requirements Engineer 3; Requirements Engineer 4; Requirements Engineer 5; Requirements Engineer Lead | 672h |  | 65,520 |  |
| 42 | 1.1.9 | Create project requirements document | 7d | 2020-03-18 | 2020-03-26 | 41 |  |  | 0d |  | Testing Engineer Lead | 56h |  | 7,952 |  |
| 43 | 1.1.10 | Review project requirements document | 3d | 2020-03-27 | 2020-03-31 | 42 |  |  | 0d |  | Deployment Engineer Lead; Design Engineer Lead; Project Manager; Requirements Engineer Lead; Testing Engineer Lead | 120h |  | 17,520 |  |
| 44 | 1.1.11 | Finalize project requirements document (milestone M01) | 1d | 2020-04-01 | 2020-04-01 | 43 |  |  | 0d |  | Deployment Engineer Lead; Design Engineer Lead; Development Engineer Lead; Project Manager; Requirements Engineer Lead; Testing Engineer Lead | 48h |  | 7,120 |  |
| 45 | 1.2 | **Design** | 27d | 2020-04-02 | 2020-05-08 |  |  |  | 0d |  |  | 722.4h |  | 83,060 |  |
| 46 | 1.2.1 | **Host computer system design** | 21d | 2020-04-02 | 2020-04-30 |  |  |  | 38d |  |  | 158.4h |  | 16,920 |  |
| 47 | 1.2.1.1 | Network connections design (App& Hardware) | 12d | 2020-04-02 | 2020-04-17 | 44 |  |  | 38d | 0d | Design Engineer 1 [25%] | 24h |  | 2,520 |  |
| 48 | 1.2.1.2 | Real-time information updating design | 10d | 2020-04-02 | 2020-04-15 | 44 |  |  | 40d | 2d | Design Engineer 1 [25%] | 20h |  | 2,100 |  |
| 49 | 1.2.1.3 | Host computer system data encryption design | 8d | 2020-04-02 | 2020-04-13 | 44 |  |  | 42d | 4d | Design Engineer 1 [25%] | 16h |  | 1,680 |  |
| 50 | 1.2.1.4 | Host computer system OS integration design | 6d | 2020-04-02 | 2020-04-09 | 44 |  |  | 44d | 6d | Design Engineer 1 [25%] | 12h |  | 1,260 |  |
| 51 | 1.2.1.5 | Review host computer system design | 7d | 2020-04-20 | 2020-04-28 | 47, 48, 49, 50 |  |  | 38d | 0d | Design Engineer 1; Design Engineer Lead [20%] | 67.2h |  | 7,280 |  |
| 52 | 1.2.1.6 | Finalize host computer system design | 2d | 2020-04-29 | 2020-04-30 | 51 |  |  | 38d | 0d | Design Engineer 1; Design Engineer Lead [20%] | 19.2h |  | 2,080 |  |

| ID | WBS | Task | Duration | Start | Finish | Predecessors | Total slack | Free slack | Resources | Work | Cost |
| --- | --- | --- | --- | --- | --- | --- | --- | --- | --- | --- | --- |
| 53 | 1.2.2 | **Server/back-end design** | 21d | 2020-04-02 | 2020-04-30 |  | 0d |  |  | 135.2h | 14,420 |
| 54 | 1.2.2.1 | Design schema | 14d | 2020-04-02 | 2020-04-21 | 44 | 0d |  | Design Engineer 2 [25%] | 28h | 2,940 |
| 55 | 1.2.2.2 | Design CRUD applications | 7d | 2020-04-02 | 2020-04-10 | 44 | 7d |  | Design Engineer 2 [25%] | 14h | 1,470 |
| 56 | 1.2.2.3 | Design DB security systems | 10d | 2020-04-02 | 2020-04-15 | 44 | 4d |  | Design Engineer 2 [25%] | 20h | 2,100 |
| 57 | 1.2.2.4 | Design DBMS integration with system | 3d | 2020-04-02 | 2020-04-06 | 44 | 11d |  | Design Engineer 2 [25%] | 6h | 630 |
| 58 | 1.2.2.5 | Review server/back-end design | 5d | 2020-04-22 | 2020-04-28 | 54, 55, 56, 57 | 0d |  | Design Engineer 2; Design Engineer Lead [20%] | 48h | 5,200 |
| 59 | 1.2.2.6 | Finalize server/back-end design | 2d | 2020-04-29 | 2020-04-30 | 58 | 0d |  | Design Engineer 2; Design Engineer Lead [20%] | 19.2h | 2,080 |
| 60 | 1.2.3 | **Mobile application** | 21d | 2020-04-02 | 2020-04-30 |  | 42d |  |  | 102.4h | 10,944 |
| 61 | 1.2.3.1 | Design UTD map display | 8d | 2020-04-02 | 2020-04-13 | 44 | 49d | 7d | Design Engineer 3 [16%] | 10.24h | 1,075.2 |
| 62 | 1.2.3.2 | Design real-time updating system | 15d | 2020-04-02 | 2020-04-22 | 44 | 42d | 0d | Design Engineer 3 [16%] | 19.2h | 2,016 |
| 63 | 1.2.3.3 | Design payment page | 4d | 2020-04-02 | 2020-04-07 | 44 | 53d | 11d | Design Engineer 3 [16%] | 5.12h | 537.6 |
| 64 | 1.2.3.4 | Payment validation design | 4d | 2020-04-02 | 2020-04-07 | 44 | 53d | 11d | Design Engineer 3 [16%] | 5.12h | 537.6 |
| 65 | 1.2.3.5 | Design login/logout pages | 2d | 2020-04-02 | 2020-04-03 | 44 | 55d | 13d | Design Engineer 3 [16%] | 2.56h | 268.8 |
| 66 | 1.2.3.6 | User authentication design | 2d | 2020-04-02 | 2020-04-03 | 44 | 55d | 13d | Design Engineer 3 [16%] | 2.56h | 268.8 |
| 67 | 1.2.3.7 | Review mobile application design | 3d | 2020-04-23 | 2020-04-27 | 61, 62, 63, 64, 65, 66 | 42d | 0d | Design Engineer 3; Design Engineer Lead [20%] | 28.8h | 3,120 |
| 68 | 1.2.3.8 | Finalize mobile application design | 3d | 2020-04-28 | 2020-04-30 | 67 | 42d | 0d | Design Engineer 3; Design Engineer Lead [20%] | 28.8h | 3,120 |
| 69 | 1.2.4 | **Web page** | 10d | 2020-04-02 | 2020-04-15 |  | 203d |  |  | 70.4h | 7,520 |
| 70 | 1.2.4.1 | Design payment page | 3d | 2020-04-02 | 2020-04-06 | 44 | 206d | 3d | Design Engineer 4 [20%] | 4.8h | 504 |
| 71 | 1.2.4.2 | Payment validation design | 4d | 2020-04-02 | 2020-04-07 | 44 | 205d | 2d | Design Engineer 4 [20%] | 6.4h | 672 |
| 72 | 1.2.4.3 | Design login/logout pages | 3d | 2020-04-02 | 2020-04-06 | 44 | 206d | 3d | Design Engineer 4 [20%] | 4.8h | 504 |
| 73 | 1.2.4.4 | Design admin page | 6d | 2020-04-02 | 2020-04-09 | 44 | 203d | 0d | Design Engineer 4 [20%] | 9.6h | 1,008 |
| 74 | 1.2.4.5 | User authentication design | 4d | 2020-04-02 | 2020-04-07 | 44 | 205d | 2d | Design Engineer 4 [20%] | 6.4h | 672 |
| 75 | 1.2.4.6 | Review web page design | 2d | 2020-04-10 | 2020-04-13 | 70, 71, 72, 73, 74 | 203d | 0d | Design Engineer 4; Design Engineer Lead [20%] | 19.2h | 2,080 |
| 76 | 1.2.4.7 | Finalize web page design | 2d | 2020-04-14 | 2020-04-15 | 75 | 203d | 11d | Design Engineer 4; Design Engineer Lead [20%] | 19.2h | 2,080 |

| ID | WBS | Task | Duration | Start | Finish | Predecessors | Total slack | Free slack | Resources | Work | Cost |
| --- | --- | --- | --- | --- | --- | --- | --- | --- | --- | --- | --- |
| 77 | 1.2.5 | **UI/UX** | 5d | 2020-04-02 | 2020-04-08 |  | 77d |  |  | 56h | 6,200 |
| 78 | 1.2.5.1 | Design mobile application UI/UX | 3d | 2020-04-02 | 2020-04-06 | 44 | 77d | 0d | Design Engineer 5 [50%] | 12h | 1,260 |
| 79 | 1.2.5.2 | Design web page UI/UX | 3d | 2020-04-02 | 2020-04-06 | 44 | 77d | 0d | Design Engineer 5 [50%] | 12h | 1,260 |
| 80 | 1.2.5.3 | Review UI/UX design | 1d | 2020-04-07 | 2020-04-07 | 78, 79 | 77d | 0d | Design Engineer Lead; Design Engineer 5 | 16h | 1,840 |
| 81 | 1.2.5.4 | Finalize UI/UX design | 1d | 2020-04-08 | 2020-04-08 | 80 | 77d | 0d | Design Engineer Lead; Design Engineer 5 | 16h | 1,840 |
| 82 | 1.2.6 | Draft final design document | 3d | 2020-05-01 | 2020-05-05 | 81, 52, 59, 68, 76 | 192d | 0d | Design Engineer 1; Design Engineer 2; Design Engineer 3; Design Engineer 4; Design Engineer Lead | 120h | 13,080 |
| 83 | 1.2.7 | Review design document | 2d | 2020-05-06 | 2020-05-07 | 82 | 192d | 0d | Design Engineer Lead; Development Engineer Lead; Project Manager | 48h | 8,560 |
| 84 | 1.2.8 | Finalize design document (milestone 02) | 1d | 2020-05-08 | 2020-05-08 | 83 | 192d |  | Design Engineer Lead; Development Engineer Lead; Project Manager; Testing Engineer Lead | 32h | 5,416 |
| 85 | 1.3 | **Development** | 104d | 2020-04-09 | 2020-09-01 |  | 16d |  |  | 1936h | 264,632 |
| 86 | 1.3.1 | **UI/UX** | 14d | 2020-04-09 | 2020-04-28 |  | 77d |  |  | 108h | 14,580 |
| 87 | 1.3.1.1 | Develop mobile application UI/UX | 10d | 2020-04-09 | 2020-04-22 | 81 | 78d | 1d | Development Engineer 1 [50%] | 40h | 5,400 |
| 88 | 1.3.1.2 | Develop web page UI/UX | 11d | 2020-04-09 | 2020-04-23 | 81 | 77d | 0d | Development Engineer 1 [50%] | 44h | 5,940 |
| 89 | 1.3.1.3 | Review/Finalize UI/UX development | 3d | 2020-04-24 | 2020-04-28 | 87, 88 | 77d | 0d | Development Engineer 1 | 24h | 3,240 |
| 90 | 1.3.2 | **Host computer system** | 37d | 2020-05-01 | 2020-06-22 |  | 38d |  |  | 220h | 29,700 |
| 91 | 1.3.2.1 | Build network between mobile app & RF sensors | 30d | 2020-05-01 | 2020-06-11 | 52 | 38d | 0d | Development Engineer 2 [50%] | 120h | 16,200 |
| 92 | 1.3.2.2 | Build real-time updating system | 12d | 2020-05-01 | 2020-05-18 | 52 | 56d | 18d | Development Engineer 2 [50%] | 48h | 6,480 |
| 93 | 1.3.2.3 | Install OS | 2d | 2020-06-12 | 2020-06-15 | 52, 92, 91 | 39d | 1d | Development Engineer 2 [50%] | 8h | 1,080 |
| 94 | 1.3.2.4 | Develop data encryption | 3d | 2020-06-12 | 2020-06-16 | 52, 92, 91 | 38d | 0d | Development Engineer 2 [50%] | 12h | 1,620 |
| 95 | 1.3.2.5 | Review/Finalize Host computer system development | 4d | 2020-06-17 | 2020-06-22 | 91, 92, 93, 94 | 38d | 0d | Development Engineer 2 | 32h | 4,320 |
| 96 | 1.3.3 | **Server/back-end** | 75d | 2020-05-01 | 2020-08-13 |  | 0d |  |  | 920h | 124,200 |
| 97 | 1.3.3.1 | Integrate DBMS into system | 5d | 2020-05-01 | 2020-05-07 | 59 | 0d |  | Development Engineer 3 | 40h | 5,400 |
| 98 | 1.3.3.2 | Build schema | 30d | 2020-05-08 | 2020-06-18 | 59, 97 | 0d |  | Development Engineer 3 | 240h | 32,400 |
| 99 | 1.3.3.3 | Build service tier applications | 20d | 2020-06-19 | 2020-07-16 | 59, 98 | 0d |  | Development Engineer 3; Development Engineer 4; Development Engineer 5 | 480h | 64,800 |
| 100 | 1.3.3.4 | Develop security protocols to protect DB data | 15d | 2020-07-17 | 2020-08-06 | 59, 98, 99 | 0d |  | Development Engineer 3 | 120h | 16,200 |
| 101 | 1.3.3.5 | Review/Finalize server/back-end development | 5d | 2020-08-07 | 2020-08-13 | 97, 98, 99, 100 | 0d |  | Development Engineer 3 | 40h | 5,400 |

| ID | WBS | Task | Duration | Start | Finish | Predecessors | Total slack | Free slack | Resources | Work | Cost |
| --- | --- | --- | --- | --- | --- | --- | --- | --- | --- | --- | --- |
| 102 | 1.3.4 | **Mobile application** | 33d | 2020-05-01 | 2020-06-16 |  | 42d |  |  | 356h | 44,364 |
| 103 | 1.3.4.1 | Program UTD campus map display | 12d | 2020-05-01 | 2020-05-18 | 68 | 42d | 0d | Development Engineer 7 | 96h | 12,960 |
| 104 | 1.3.4.2 | Program real-time updating map display | 14d | 2020-05-19 | 2020-06-05 | 68, 103 | 42d | 0d | Testing Engineer 7 | 112h | 11,424 |
| 105 | 1.3.4.3 | Program login/logout pages | 5d | 2020-05-01 | 2020-05-07 | 68 | 63d | 21d | Development Engineer 6 [50%] | 20h | 2,700 |
| 106 | 1.3.4.4 | Program payment page | 5d | 2020-05-01 | 2020-05-07 | 68 | 63d | 21d | Development Engineer 8 [50%] | 20h | 2,700 |
| 107 | 1.3.4.5 | Program transaction validator | 6d | 2020-05-01 | 2020-05-08 | 68 | 62d | 20d | Development Engineer 8 [50%] | 24h | 3,240 |
| 108 | 1.3.4.6 | Program user authentication procedure | 7d | 2020-05-01 | 2020-05-11 | 68 | 61d | 19d | Development Engineer 6 [50%] | 28h | 3,780 |
| 109 | 1.3.4.7 | Review/Finalize mobile application development | 7d | 2020-06-08 | 2020-06-16 | 103, 104, 105, 106, 107, 108 | 42d | 0d | Development Engineer 7 | 56h | 7,560 |
| 110 | 1.3.5 | **Web page** | 18d | 2020-05-01 | 2020-05-26 |  | 163.47d |  |  | 132h | 17,820 |
| 111 | 1.3.5.1 | Program login/logout pages | 5d | 2020-05-01 | 2020-05-07 | 68 | 164.47d | 1d | Development Engineer 9 [50%] | 20h | 2,700 |
| 112 | 1.3.5.2 | Program payment pages | 3d | 2020-05-11 | 2020-05-13 | 111, 115 | 165.47d | 2d | Development Engineer 9 [50%] | 12h | 1,620 |
| 113 | 1.3.5.3 | Program admin page | 4d | 2020-05-18 | 2020-05-21 | 112, 114 | 163.47d | 0d | Development Engineer 9 | 32h | 4,320 |
| 114 | 1.3.5.4 | Program payment validator | 5d | 2020-05-11 | 2020-05-15 | 111, 115 | 163.47d | 0d | Development Engineer 9 [50%] | 20h | 2,700 |
| 115 | 1.3.5.5 | Program user authentication procedure | 6d | 2020-05-01 | 2020-05-08 | 68 | 163.47d | 0d | Development Engineer 9 [50%] | 24h | 3,240 |
| 116 | 1.3.5.6 | Review/Finalize web page development | 3d | 2020-05-22 | 2020-05-26 | 111, 112, 113, 114, 115 | 163.47d | 0d | Development Engineer 9 | 24h | 3,240 |
| 117 | 1.3.6 | Draft final development document | 8d | 2020-08-14 | 2020-08-25 | 109, 101, 95, 89 | 0d |  | Development Engineer Lead | 64h | 10,240 |
| 118 | 1.3.7 | Review development document | 3d | 2020-08-26 | 2020-08-28 | 117 | 0d |  | Development Engineer Lead; Project Manager; Testing Engineer Lead | 72h | 13,248 |
| 119 | 1.3.8 | Finalize development (milestone 03) | 2d | 2020-08-31 | 2020-09-01 | 118 | 0d |  | Deployment Engineer Lead; Development Engineer Lead; Project Manager; Testing Engineer Lead | 64h | 10,480 |
| 120 | 1.4 | **Testing** | 160d | 2020-04-29 | 2020-12-08 |  | 40d |  |  | 2254h | 247,452 |
| 121 | 1.4.1 | Write Unit test | 10d | 2020-09-02 | 2020-09-15 | 119 | 0d |  | Testing Engineer 1; Testing Engineer 12; Testing Engineer Lead | 240h | 27,680 |
| 122 | 1.4.2 | Review Unit tests | 3d | 2020-09-16 | 2020-09-18 | 121 | 0d |  | Project Manager; Testing Engineer Lead | 48h | 9,408 |
| 123 | 1.4.3 | Finalize unit tests | 1d | 2020-09-21 | 2020-09-21 | 122 | 0d |  | Project Manager; Requirements Engineer Lead; Testing Engineer Lead; Development Engineer Lead | 32h | 5,296 |
| 124 | 1.4.4 | **Test mobile application** | 16d | 2020-06-17 | 2020-07-08 |  | 109d |  |  | 212h | 21,624 |
| 125 | 1.4.4.1 | Test UTD map display | 7d | 2020-06-17 | 2020-06-25 | 109 | 109d | 0d | Testing Engineer 1 | 56h | 5,712 |
| 126 | 1.4.4.2 | Test real-time parking lot updating | 7d | 2020-06-26 | 2020-07-06 | 125 | 109d | 0d | Testing Engineer 1 | 56h | 5,712 |
| 127 | 1.4.4.3 | Test login/logout pages | 8d | 2020-06-17 | 2020-06-26 | 109 | 113d | 0d | Testing Engineer 2 [50%] | 32h | 3,264 |
| 128 | 1.4.4.4 | Test user authentication systems | 2d | 2020-06-29 | 2020-06-30 | 127 | 113d | 4d | Testing Engineer 2 [50%] | 8h | 816 |
| 129 | 1.4.4.5 | Test payment page | 5d | 2020-06-17 | 2020-06-23 | 109 | 116d | 0d | Testing Engineer 2 [50%] | 20h | 2,040 |
| 130 | 1.4.4.6 | Test payment validation system | 2d | 2020-06-24 | 2020-06-25 | 129 | 116d | 7d | Testing Engineer 2 [50%] | 8h | 816 |
| 131 | 1.4.4.7 | Finalize mobile application testing | 2d | 2020-07-07 | 2020-07-08 | 125, 126, 127, 128, 129, 130 | 109d | 49d | Testing Engineer 1; Testing Engineer 2 | 32h | 3,264 |

| ID | WBS | Task | Duration | Start | Finish | Predecessors | Total slack | Free slack | Resources | Work | Cost |
| --- | --- | --- | --- | --- | --- | --- | --- | --- | --- | --- | --- |
| 132 | 1.4.5 | **Test Server/back-end** | 20d | 2020-08-14 | 2020-09-10 |  | 61d |  |  | 116h | 11,832 |
| 133 | 1.4.5.1 | Test DBMS integration | 8d | 2020-08-14 | 2020-08-25 | 101 | 70d | 9d | Testing Engineer 3 [25%] | 16h | 1,632 |
| 134 | 1.4.5.2 | Test DB security | 12d | 2020-08-14 | 2020-08-31 | 101 | 66d | 5d | Testing Engineer 3 [25%] | 24h | 2,448 |
| 135 | 1.4.5.3 | Test DB schema | 9d | 2020-08-14 | 2020-08-26 | 101 | 69d | 8d | Testing Engineer 3 [25%] | 18h | 1,836 |
| 136 | 1.4.5.4 | Test service tier applications | 17d | 2020-08-14 | 2020-09-07 | 101 | 61d | 0d | Testing Engineer 3 [25%] | 34h | 3,468 |
| 137 | 1.4.5.5 | Finalize server/back-end testing | 3d | 2020-09-08 | 2020-09-10 | 133, 134, 135, 136 | 61d | 0d | Testing Engineer 3 | 24h | 2,448 |
| 138 | 1.4.6 | **Test host computer system** | 17d | 2020-06-23 | 2020-07-15 |  | 100d |  |  | 296h | 30,192 |
| 139 | 1.4.6.1 | Test networks between mobile app and RF sensors | 14d | 2020-06-23 | 2020-07-10 | 95 | 100d | 0d | Testing Engineer 4 | 112h | 11,424 |
| 140 | 1.4.6.2 | Test real-time parking lot updating | 6d | 2020-06-23 | 2020-06-30 | 95 | 108d | 8d | Testing Engineer 5 | 48h | 4,896 |
| 141 | 1.4.6.3 | Test installed OS | 8d | 2020-06-23 | 2020-07-02 | 95 | 106d | 6d | Testing Engineer 6 | 64h | 6,528 |
| 142 | 1.4.6.4 | Test system data encryption | 3d | 2020-06-23 | 2020-06-25 | 95 | 111d | 11d | Testing Engineer 7 | 24h | 2,448 |
| 143 | 1.4.6.5 | Finalize host computer system testing | 3d | 2020-07-13 | 2020-07-15 | 139, 140, 141, 142 | 100d | 0d | Testing Engineer 4; Testing Engineer 5 | 48h | 4,896 |
| 144 | 1.4.7 | **Test Web page** | 6d | 2020-05-27 | 2020-06-03 |  | 163.47d |  |  | 168h | 17,136 |
| 145 | 1.4.7.1 | Test login/logout pages | 2d | 2020-05-27 | 2020-05-28 | 116 | 164.47d | 0d | Testing Engineer 8 | 16h | 1,632 |
| 146 | 1.4.7.2 | Test payment pages | 2d | 2020-05-27 | 2020-05-28 | 116 | 164.47d | 0d | Testing Engineer 9 | 16h | 1,632 |
| 147 | 1.4.7.3 | Test admin page | 5d | 2020-05-27 | 2020-06-02 | 116 | 163.47d | 0d | Testing Engineer 10; Testing Engineer 11 | 80h | 8,160 |
| 148 | 1.4.7.4 | Test payment validation system | 2d | 2020-05-29 | 2020-06-01 | 145 | 164.47d | 1d | Testing Engineer 8 | 16h | 1,632 |
| 149 | 1.4.7.5 | Test user authentication system | 2d | 2020-05-29 | 2020-06-01 | 146 | 164.47d | 1d | Testing Engineer 9 | 16h | 1,632 |
| 150 | 1.4.7.6 | Finalize web page testing | 1d | 2020-06-03 | 2020-06-03 | 145, 146, 147, 148, 149 | 163.47d | 74d | Testing Engineer 8; Testing Engineer 9; Testing Engineer 10 | 24h | 2,448 |
| 151 | 1.4.8 | **UI/UX** | 9d | 2020-04-29 | 2020-05-11 |  | 151d |  |  | 68h | 6,936 |
| 152 | 1.4.8.1 | Test mobile application UI/UX | 7d | 2020-04-29 | 2020-05-07 | 89 | 152d | 1d | Testing Engineer 12 [50%] | 28h | 2,856 |
| 153 | 1.4.8.2 | Test web page UI/UX | 8d | 2020-04-29 | 2020-05-08 | 89 | 151d | 0d | Testing Engineer 12 [50%] | 32h | 3,264 |
| 154 | 1.4.8.3 | Finalize UI/UX testing | 1d | 2020-05-11 | 2020-05-11 | 152, 153 | 151d | 91d | Testing Engineer 12 | 8h | 816 |
| 155 | 1.4.9 | Defect testing | 10.53d | 2020-09-16 | 2020-09-30 | 121, 131, 137, 143, 150, 154 | 89.47d |  | Testing Engineer 1 [95%]; Testing Engineer 4 [95%]; Testing Engineer 6 [95%]; Testing Engineer 8 [95%]; Testing Engineer 9 [95%] | 400h | 40,800 |
| 156 | 1.4.10 | Regression testing | 45d | 2020-09-22 | 2020-11-23 | 123 | 0d |  | Testing Engineer 1 [5%]; Testing Engineer 2 [5%]; Testing Engineer 3 [5%]; Testing Engineer 4 [5%]; Testing Engineer 5 [5%]; Testing Engineer 6 [5%]; Testing Engineer 7 [5%]; Testing Engineer 8 [5%]; Testing Engineer 9 [5%]; Testing Engineer 10 [5%]; Testing Engineer 11 [5%]; Testing Engineer 12 [5%]; Testing Engineer Lead [5%] | 234h | 24,588 |
| 157 | 1.4.11 | Conduct end-to-end testing | 6d | 2020-11-24 | 2020-12-01 | 156 | 0d |  | Testing Engineer Lead; Testing Engineer 1; Testing Engineer 2; Testing Engineer 3; Testing Engineer 4; Testing Engineer 8; Testing Engineer 11 | 336h | 36,192 |
| 158 | 1.4.12 | Draft final testing document | 2d | 2020-12-02 | 2020-12-03 | 157 | 0d |  | Testing Engineer Lead | 16h | 2,272 |
| 159 | 1.4.13 | Review testing document | 2d | 2020-12-04 | 2020-12-07 | 158 | 0d |  | Project Manager; Testing Engineer 1; Testing Engineer 7; Testing Engineer Lead | 64h | 9,536 |
| 160 | 1.4.14 | Finalize testing (milestone M04) | 1d | 2020-12-08 | 2020-12-08 | 159 | 0d |  | Deployment Engineer Lead; Project Manager; Testing Engineer Lead | 24h | 3,960 |

| ID | WBS | Task | Duration | Start | Finish | Predecessors | Total slack | Resources | Work | Cost |
| --- | --- | --- | --- | --- | --- | --- | --- | --- | --- | --- |
| 161 | 1.5 | **Deployment** | 144d | 2020-07-16 | 2021-02-02 |  | 0d |  | 1036h | 108,272 |
| 162 | 1.5.1 | Setup host computer system | 5d | 2020-07-16 | 2020-07-22 | 143 | 100d | Deployment Engineer 1 [50%]; Deployment Engineer 2 [50%] | 40h | 3,680 |
| 163 | 1.5.2 | Begin capturing car information from parking lot gates | 1d | 2020-12-09 | 2020-12-09 | 131, 137, 143, 154, 160 | 0d | Deployment Engineer 4 | 8h | 736 |
| 164 | 1.5.3 | Launch database | 3d | 2020-09-11 | 2020-09-15 | 137 | 61d | Deployment Engineer 3 | 24h | 2,208 |
| 165 | 1.5.4 | Establish connection between UTD database and app database | 1d | 2020-09-11 | 2020-09-11 | 137, 143 | 63d | Deployment Engineer 1 [50%] | 4h | 368 |
| 166 | 1.5.5 | Open network ports/sockets | 2d | 2020-07-16 | 2020-07-17 | 143 | 103d | Deployment Engineer 2 [50%] | 8h | 736 |
| 167 | 1.5.6 | Connect system components | 16d | 2020-12-10 | 2020-12-31 | 160, 163, 162, 164, 165, 166 | 0d | Deployment Engineer 4; Deployment Engineer Lead; Development Engineer Lead | 336h | 39,760 |
| 168 | 1.5.7 | **Launch app** | 1d | 2021-01-01 | 2021-01-01 |  | 0d |  | 8h | 736 |
| 169 | 1.5.7.1 | Release on Apple App Store | 1d | 2021-01-01 | 2021-01-01 | 167 | 0d | Deployment Engineer 3 [50%] | 4h | 368 |
| 170 | 1.5.7.2 | Release on Google Play Store | 1d | 2021-01-01 | 2021-01-01 | 167 | 0d | Deployment Engineer 3 [50%] | 4h | 368 |
| 171 | 1.5.8 | Train client on system | 14d | 2021-01-04 | 2021-01-21 | 160, 162, 163, 164, 166, 167, 169, 170 | 0d | Deployment Engineer 1; Deployment Engineer 2; Deployment Engineer 3; Deployment Engineer 4; Deployment Engineer Lead | 560h | 52,752 |
| 172 | 1.5.9 | Draft final deployment document | 2d | 2021-01-22 | 2021-01-25 | 171 | 0d | Deployment Engineer Lead | 16h | 1,648 |
| 173 | 1.5.10 | Review deployment document | 2d | 2021-01-26 | 2021-01-28 | 172 | 0d | Deployment Engineer Lead; Project Manager | 16h | 2,824 |
| 174 | 1.5.11 | Finalize deployment (milestone M05) | 2d | 2021-01-29 | 2021-02-02 | 173 | 0d | Deployment Engineer Lead; Project Manager | 16h | 2,824 |
