Schedule from MS Project, 2020-02-19 to 2020-11-20, costs in $, A marks actual dates.

## Calendars

- Standard: Mon-Fri 08:00-12:00, 13:00-17:00; Sat-Sun off.

## Resources

| Resource | Rate |
| --- | --- |
| Requirements Engineer Lead | 110 |
| Requirements Engineer 1 | 95 |
| Requirements Engineer 2 | 95 |
| Requirements Engineer 3 | 95 |
| Requirements Engineer 4 | 95 |
| Requirements Engineer 5 | 95 |
| Design Engineer Lead | 125 |
| Design Engineer 1 | 105 |
| Design Engineer 2 | 105 |
| Design Engineer 3 | 105 |
| Design Engineer 4 | 105 |
| Development Engineer Lead | 160 |
| Development Engineer 1 | 135 |
| Development Engineer 2 | 135 |
| Development Engineer 3 | 135 |
| Development Engineer 4 | 135 |
| Development Engineer 5 | 135 |
| Development Engineer 6 | 135 |
| Development Engineer 7 | 135 |
| Development Engineer 8 | 135 |
| Development Engineer 9 | 135 |
| Testing Engineer Lead | 142 |
| Testing Engineer 1 | 102 |
| Testing Engineer 2 | 102 |
| Testing Engineer 3 | 102 |
| Testing Engineer 4 | 102 |
| Testing Engineer 5 | 102 |
| Testing Engineer 6 | 102 |
| Testing Engineer 7 | 102 |
| Testing Engineer 8 | 102 |
| Testing Engineer 9 | 102 |
| Testing Engineer 10 | 102 |
| Testing Engineer 11 | 102 |
| Testing Engineer 12 | 102 |
| Deployment Engineer Lead | 103 |
| Deployment Engineer 1 | 92 |
| Deployment Engineer 2 | 92 |
| Deployment Engineer 3 | 92 |
| Deployment Engineer 4 | 92 |
| Project Manager | 250 |
| Design Engineer 5 | 105 |

## Schedule

| ID | WBS | Task | Duration | Start | Finish | Predecessors | Complete | Remaining | Total slack | Resources | Work | Actual work | Cost | Actual cost |
| --- | --- | --- | --- | --- | --- | --- | --- | --- | --- | --- | --- | --- | --- | --- |
| 1 | 1 | **Project** | 198d | 2020-02-19 A | 2020-11-20 |  | 91% | 16.96d | 0d |  | 6906.24h | 5326.24h | 811,760.6 | 636,932.6 |
| 2 | 1.1 | **Requirement** | 33d | 2020-02-19 A | 2020-04-03 A |  | 100% |  |  |  | 1198.64h | 1198.64h | 132,058.8 | 132,058.8 |
| 3 | 1.1.1 | Create stakeholder map | 2d | 2020-02-19 A | 2020-02-20 A |  | 100% |  |  | Requirements Engineer Lead [50%] | 8h | 8h | 880 | 880 |
| 4 | 1.1.2 | Create stakeholder analysis | 3d | 2020-02-19 A | 2020-02-21 A |  | 100% |  |  | Requirements Engineer Lead [50%] | 12h | 12h | 880 | 880 |
| 5 | 1.1.3 | **Host Computer System Requirements** | 5d | 2020-02-19 A | 2020-02-25 A |  | 100% |  |  |  | 43.2h | 43.2h | 4,152 | 4,152 |
| 6 | 1.1.3.1 | Draft network requirement questions | 1d | 2020-02-19 A | 2020-02-19 A |  | 100% |  |  | Requirements Engineer 1 [25%] | 2h | 2h | 190 | 190 |
| 7 | 1.1.3.2 | Draft real-time updating requirements questions | 1d | 2020-02-19 A | 2020-02-19 A |  | 100% |  |  | Requirements Engineer 1 [25%] | 2h | 2h | 190 | 190 |
| 8 | 1.1.3.3 | Draft OS requirements questions | 1d | 2020-02-19 A | 2020-02-19 A |  | 100% |  |  | Requirements Engineer 1 [25%] | 2h | 2h | 190 | 190 |
| 9 | 1.1.3.4 | Draft data encryption requirements questions | 1d | 2020-02-19 A | 2020-02-19 A |  | 100% |  |  | Requirements Engineer 1 [25%] | 2h | 2h | 190 | 190 |
| 10 | 1.1.3.5 | Review all host computer system requirements questions | 2d | 2020-02-20 A | 2020-02-21 A | 6, 7, 8 | 100% |  |  | Requirements Engineer 1 | 16h | 16h | 1,520 | 1,520 |
| 11 | 1.1.3.6 | Finalize all host computer system requirements questions | 2d | 2020-02-24 A | 2020-02-25 A | 10, 3, 4 | 100% |  |  | Requirements Engineer 1; Requirements Engineer Lead [20%] | 19.2h | 19.2h | 1,872 | 1,872 |
| 12 | 1.1.4 | **Server/back-end** | 5d | 2020-02-19 A | 2020-02-25 A |  | 100% |  |  |  | 35.6h | 35.6h | 3,406 | 3,406 |
| 13 | 1.1.4.1 | Draft DB schema requirements questions | 1d | 2020-02-19 A | 2020-02-19 A |  | 100% |  |  | Requirements Engineer 2 [25%] | 2h | 2h | 190 | 190 |
| 14 | 1.1.4.2 | Draft DB security requirements questions | 1d | 2020-02-19 A | 2020-02-19 A |  | 100% |  |  | Requirements Engineer 2 [25%] | 2h | 2h | 190 | 190 |
| 15 | 1.1.4.3 | Draft DB applications requirements questions | 1d | 2020-02-19 A | 2020-02-19 A |  | 100% |  |  | Requirements Engineer 2 [25%] | 2h | 2h | 190 | 190 |
| 16 | 1.1.4.4 | Draft DBMS requirements questions | 2d | 2020-02-19 A | 2020-02-20 A |  | 100% |  |  | Requirements Engineer 2 [25%] | 4h | 4h | 380 | 380 |
| 17 | 1.1.4.5 | Review all server/back-end requirements questions | 2d | 2020-02-21 A | 2020-02-24 A | 13, 14, 15, 16 | 100% |  |  | Requirements Engineer 2 | 16h | 16h | 1,520 | 1,520 |
| 18 | 1.1.4.6 | Finalize all server/back-end requirements questions | 1d | 2020-02-25 A | 2020-02-25 A | 17, 3, 4 | 100% |  |  | Requirements Engineer 2; Requirements Engineer Lead [20%] | 9.6h | 9.6h | 936 | 936 |
| 19 | 1.1.5 | **Web page** | 6d | 2020-02-19 A | 2020-02-26 A |  | 100% |  |  |  | 35.2h | 35.2h | 3,392 | 3,392 |
| 20 | 1.1.5.1 | Draft login/logout page requirements questions | 1d | 2020-02-19 A | 2020-02-19 A |  | 100% |  |  | Requirements Engineer 3 [20%] | 1.6h | 1.6h | 152 | 152 |
| 21 | 1.1.5.2 | Draft payment page requirements questions | 1d | 2020-02-19 A | 2020-02-19 A |  | 100% |  |  | Requirements Engineer 3 [20%] | 1.6h | 1.6h | 152 | 152 |
| 22 | 1.1.5.3 | Draft user authentication requirements questions | 1d | 2020-02-19 A | 2020-02-19 A |  | 100% |  |  | Requirements Engineer 3 [20%] | 1.6h | 1.6h | 152 | 152 |
| 23 | 1.1.5.4 | Draft payment validation requirement questions | 1d | 2020-02-19 A | 2020-02-19 A |  | 100% |  |  | Requirements Engineer 3 [20%] | 1.6h | 1.6h | 152 | 152 |
| 24 | 1.1.5.5 | Draft admin page requirements questions | 1d | 2020-02-19 A | 2020-02-19 A |  | 100% |  |  | Requirements Engineer 3 [20%] | 1.6h | 1.6h | 152 | 152 |
| 25 | 1.1.5.6 | Review all web interface requirements questions | 1d | 2020-02-20 A | 2020-02-20 A | 20, 21, 22, 23, 24 | 100% |  |  | Requirements Engineer 3 | 8h | 8h | 760 | 760 |
| 26 | 1.1.5.7 | Finalize all web interface requirements questions | 2d | 2020-02-25 A | 2020-02-26 A | 3, 4, 17 | 100% |  |  | Requirements Engineer 3; Requirements Engineer Lead [20%] | 19.2h | 19.2h | 1,872 | 1,872 |

| ID | WBS | Task | Duration | Start | Finish | Predecessors | Complete | Resources | Work | Actual work | Cost | Actual cost |
| --- | --- | --- | --- | --- | --- | --- | --- | --- | --- | --- | --- | --- |
| 27 | 1.1.6 | **Mobile application** | 5d | 2020-02-19 A | 2020-02-25 A |  | 100% |  | 37.44h | 37.44h | 3,604.8 | 3,604.8 |
| 28 | 1.1.6.1 | Draft UTD map display requirements questions | 1d | 2020-02-19 A | 2020-02-19 A |  | 100% | Requirements Engineer 4 [16%] | 1.28h | 1.28h | 121.6 | 121.6 |
| 29 | 1.1.6.2 | Draft payment Page requirements questions | 1d | 2020-02-19 A | 2020-02-19 A |  | 100% | Requirements Engineer 4 [16%] | 1.28h | 1.28h | 121.6 | 121.6 |
| 30 | 1.1.6.3 | Draft user authentication requirements questions | 1d | 2020-02-19 A | 2020-02-19 A |  | 100% | Requirements Engineer 4 [16%] | 1.28h | 1.28h | 121.6 | 121.6 |
| 31 | 1.1.6.4 | Draft payment validation requirement questions | 1d | 2020-02-19 A | 2020-02-19 A |  | 100% | Requirements Engineer 4 [16%] | 1.28h | 1.28h | 121.6 | 121.6 |
| 32 | 1.1.6.5 | Draft real-time updating requirements questions | 2d | 2020-02-19 A | 2020-02-20 A |  | 100% | Requirements Engineer 4 [16%] | 2.56h | 2.56h | 243.2 | 243.2 |
| 33 | 1.1.6.6 | Draft login/logout page requirements questions | 2d | 2020-02-19 A | 2020-02-20 A |  | 100% | Requirements Engineer 4 [16%] | 2.56h | 2.56h | 243.2 | 243.2 |
| 34 | 1.1.6.7 | Review all mobile application requirements questions | 1d | 2020-02-21 A | 2020-02-21 A | 28, 29, 30, 31, 32, 33 | 100% | Requirements Engineer 4 | 8h | 8h | 760 | 760 |
| 35 | 1.1.6.8 | Finalize all mobile application requirements questions | 2d | 2020-02-24 A | 2020-02-25 A | 34, 3, 4 | 100% | Requirements Engineer 4; Requirements Engineer Lead [20%] | 19.2h | 19.2h | 1,872 | 1,872 |
| 36 | 1.1.7 | **UI/UX** | 5d | 2020-02-19 A | 2020-02-25 A |  | 100% |  | 35.2h | 35.2h | 3,392 | 3,392 |
| 37 | 1.1.7.1 | Draft UI/UX mobile application UI/UX requirements questions | 1d | 2020-02-19 A | 2020-02-19 A |  | 100% | Requirements Engineer 5 [50%] | 4h | 4h | 380 | 380 |
| 38 | 1.1.7.2 | Draft UI/UX web page UI/UX requirements questions | 1d | 2020-02-19 A | 2020-02-19 A |  | 100% | Requirements Engineer 5 [50%] | 4h | 4h | 380 | 380 |
| 39 | 1.1.7.3 | Review UI/UX requirements questions | 1d | 2020-02-20 A | 2020-02-20 A | 37, 38 | 100% | Requirements Engineer 5 | 8h | 8h | 760 | 760 |
| 40 | 1.1.7.4 | finalize UI/UX requirements questions | 2d | 2020-02-24 A | 2020-02-25 A | 3, 4, 39 | 100% | Requirements Engineer 5; Requirements Engineer Lead [20%] | 19.2h | 19.2h | 1,872 | 1,872 |
| 41 | 1.1.8 | Hold interview with customer | 14d | 2020-02-27 A | 2020-03-17 A | 40, 35, 26, 18, 11 | 100% | Requirements Engineer 1; Requirements Engineer 2; Requirements Engineer 3; Requirements Engineer 4; Requirements Engineer 5; Requirements Engineer Lead | 672h | 672h | 65,520 | 65,520 |
| 42 | 1.1.9 | Create project requirements document | 7d | 2020-03-18 A | 2020-03-26 A | 41 | 100% | Testing Engineer Lead | 56h | 56h | 7,952 | 7,952 |
| 43 | 1.1.10 | Review project requirements document | 3d | 2020-03-27 A | 2020-03-31 A | 42 | 100% | Deployment Engineer Lead; Design Engineer Lead; Project Manager; Requirements Engineer Lead; Testing Engineer Lead | 120h | 120h | 17,520 | 17,520 |
| 44 | 1.1.11 | Finalize project requirements document (milestone M01) | 3d | 2020-04-01 A | 2020-04-03 A | 43 | 100% | Deployment Engineer Lead; Design Engineer Lead; Development Engineer Lead; Project Manager; Requirements Engineer Lead; Testing Engineer Lead | 144h | 144h | 21,360 | 21,360 |
| 45 | 1.2 | **Design** | 28d | 2020-04-02 A | 2020-05-11 A |  | 100% |  | 754.4h | 754.4h | 88,476 | 88,476 |
| 46 | 1.2.1 | **Host computer system design** | 21d | 2020-04-02 A | 2020-04-30 A |  | 100% |  | 158.4h | 158.4h | 16,920 | 16,920 |
| 47 | 1.2.1.1 | Network connections design (App& Hardware) | 12d | 2020-04-02 A | 2020-04-17 A | 44 | 100% | Design Engineer 1 [25%] | 24h | 24h | 2,520 | 2,520 |
| 48 | 1.2.1.2 | Real-time information updating design | 10d | 2020-04-02 A | 2020-04-15 A | 44 | 100% | Design Engineer 1 [25%] | 20h | 20h | 2,100 | 2,100 |
| 49 | 1.2.1.3 | Host computer system data encryption design | 8d | 2020-04-02 A | 2020-04-13 A | 44 | 100% | Design Engineer 1 [25%] | 16h | 16h | 1,680 | 1,680 |
| 50 | 1.2.1.4 | Host computer system OS integration design | 6d | 2020-04-02 A | 2020-04-09 A | 44 | 100% | Design Engineer 1 [25%] | 12h | 12h | 1,260 | 1,260 |
| 51 | 1.2.1.5 | Review host computer system design | 7d | 2020-04-20 A | 2020-04-28 A | 47, 48, 49, 50 | 100% | Design Engineer 1; Design Engineer Lead [20%] | 67.2h | 67.2h | 7,280 | 7,280 |
| 52 | 1.2.1.6 | Finalize host computer system design | 2d | 2020-04-29 A | 2020-04-30 A | 51 | 100% | Design Engineer 1; Design Engineer Lead [20%] | 19.2h | 19.2h | 2,080 | 2,080 |

| ID | WBS | Task | Duration | Start | Finish | Predecessors | Complete | Resources | Work | Actual work | Cost | Actual cost |
| --- | --- | --- | --- | --- | --- | --- | --- | --- | --- | --- | --- | --- |
| 53 | 1.2.2 | **Server/back-end design** | 21d | 2020-04-02 A | 2020-04-30 A |  | 100% |  | 135.2h | 135.2h | 14,420 | 14,420 |
| 54 | 1.2.2.1 | Design schema | 14d | 2020-04-02 A | 2020-04-21 A | 44 | 100% | Design Engineer 2 [25%] | 28h | 28h | 2,940 | 2,940 |
| 55 | 1.2.2.2 | Design CRUD applications | 7d | 2020-04-02 A | 2020-04-10 A | 44 | 100% | Design Engineer 2 [25%] | 14h | 14h | 1,470 | 1,470 |
| 56 | 1.2.2.3 | Design DB security systems | 10d | 2020-04-02 A | 2020-04-15 A | 44 | 100% | Design Engineer 2 [25%] | 20h | 20h | 2,100 | 2,100 |
| 57 | 1.2.2.4 | Design DBMS integration with system | 3d | 2020-04-02 A | 2020-04-06 A | 44 | 100% | Design Engineer 2 [25%] | 6h | 6h | 630 | 630 |
| 58 | 1.2.2.5 | Review server/back-end design | 5d | 2020-04-22 A | 2020-04-28 A | 54, 55, 56, 57 | 100% | Design Engineer 2; Design Engineer Lead [20%] | 48h | 48h | 5,200 | 5,200 |
| 59 | 1.2.2.6 | Finalize server/back-end design | 2d | 2020-04-29 A | 2020-04-30 A | 58 | 100% | Design Engineer 2; Design Engineer Lead [20%] | 19.2h | 19.2h | 2,080 | 2,080 |
| 60 | 1.2.3 | **Mobile application** | 21d | 2020-04-02 A | 2020-04-30 A |  | 100% |  | 102.4h | 102.4h | 10,944 | 10,944 |
| 61 | 1.2.3.1 | Design UTD map display | 8d | 2020-04-02 A | 2020-04-13 A | 44 | 100% | Design Engineer 3 [16%] | 10.24h | 10.24h | 1,075.2 | 1,075.2 |
| 62 | 1.2.3.2 | Design real-time updating system | 15d | 2020-04-02 A | 2020-04-22 A | 44 | 100% | Design Engineer 3 [16%] | 19.2h | 19.2h | 2,016 | 2,016 |
| 63 | 1.2.3.3 | Design payment page | 4d | 2020-04-02 A | 2020-04-07 A | 44 | 100% | Design Engineer 3 [16%] | 5.12h | 5.12h | 537.6 | 537.6 |
| 64 | 1.2.3.4 | Payment validation design | 4d | 2020-04-02 A | 2020-04-07 A | 44 | 100% | Design Engineer 3 [16%] | 5.12h | 5.12h | 537.6 | 537.6 |
| 65 | 1.2.3.5 | Design login/logout pages | 2d | 2020-04-02 A | 2020-04-03 A | 44 | 100% | Design Engineer 3 [16%] | 2.56h | 2.56h | 268.8 | 268.8 |
| 66 | 1.2.3.6 | User authentication design | 2d | 2020-04-02 A | 2020-04-03 A | 44 | 100% | Design Engineer 3 [16%] | 2.56h | 2.56h | 268.8 | 268.8 |
| 67 | 1.2.3.7 | Review mobile application design | 3d | 2020-04-23 A | 2020-04-27 A | 61, 62, 63, 64, 65, 66 | 100% | Design Engineer 3; Design Engineer Lead [20%] | 28.8h | 28.8h | 3,120 | 3,120 |
| 68 | 1.2.3.8 | Finalize mobile application design | 3d | 2020-04-28 A | 2020-04-30 A | 67 | 100% | Design Engineer 3; Design Engineer Lead [20%] | 28.8h | 28.8h | 3,120 | 3,120 |
| 69 | 1.2.4 | **Web page** | 10d | 2020-04-02 A | 2020-04-15 A |  | 100% |  | 70.4h | 70.4h | 7,520 | 7,520 |
| 70 | 1.2.4.1 | Design payment page | 3d | 2020-04-02 A | 2020-04-06 A | 44 | 100% | Design Engineer 4 [20%] | 4.8h | 4.8h | 504 | 504 |
| 71 | 1.2.4.2 | Payment validation design | 4d | 2020-04-02 A | 2020-04-07 A | 44 | 100% | Design Engineer 4 [20%] | 6.4h | 6.4h | 672 | 672 |
| 72 | 1.2.4.3 | Design login/logout pages | 3d | 2020-04-02 A | 2020-04-06 A | 44 | 100% | Design Engineer 4 [20%] | 4.8h | 4.8h | 504 | 504 |
| 73 | 1.2.4.4 | Design admin page | 6d | 2020-04-02 A | 2020-04-09 A | 44 | 100% | Design Engineer 4 [20%] | 9.6h | 9.6h | 1,008 | 1,008 |
| 74 | 1.2.4.5 | User authentication design | 4d | 2020-04-02 A | 2020-04-07 A | 44 | 100% | Design Engineer 4 [20%] | 6.4h | 6.4h | 672 | 672 |
| 75 | 1.2.4.6 | Review web page design | 2d | 2020-04-10 A | 2020-04-13 A | 70, 71, 72, 73, 74 | 100% | Design Engineer 4; Design Engineer Lead [20%] | 19.2h | 19.2h | 2,080 | 2,080 |
| 76 | 1.2.4.7 | Finalize web page design | 2d | 2020-04-14 A | 2020-04-15 A | 75 | 100% | Design Engineer 4; Design Engineer Lead [20%] | 19.2h | 19.2h | 2,080 | 2,080 |

| ID | WBS | Task | Duration | Start | Finish | Predecessors | Complete | Remaining | Total slack | Resources | Work | Actual work | Cost | Actual cost |
| --- | --- | --- | --- | --- | --- | --- | --- | --- | --- | --- | --- | --- | --- | --- |
| 77 | 1.2.5 | **UI/UX** | 5d | 2020-04-02 A | 2020-04-08 A |  | 100% |  |  |  | 56h | 56h | 6,200 | 6,200 |
| 78 | 1.2.5.1 | Design mobile application UI/UX | 3d | 2020-04-02 A | 2020-04-06 A | 44 | 100% |  |  | Design Engineer 5 [50%] | 12h | 12h | 1,260 | 1,260 |
| 79 | 1.2.5.2 | Design web page UI/UX | 3d | 2020-04-02 A | 2020-04-06 A | 44 | 100% |  |  | Design Engineer 5 [50%] | 12h | 12h | 1,260 | 1,260 |
| 80 | 1.2.5.3 | Review UI/UX design | 1d | 2020-04-07 A | 2020-04-07 A | 78, 79 | 100% |  |  | Design Engineer Lead; Design Engineer 5 | 16h | 16h | 1,840 | 1,840 |
| 81 | 1.2.5.4 | Finalize UI/UX design | 1d | 2020-04-08 A | 2020-04-08 A | 80 | 100% |  |  | Design Engineer Lead; Design Engineer 5 | 16h | 16h | 1,840 | 1,840 |
| 82 | 1.2.6 | Draft final design document | 3d | 2020-05-01 A | 2020-05-05 A | 81, 52, 59, 68, 76 | 100% |  |  | Design Engineer 1; Design Engineer 2; Design Engineer 3; Design Engineer 4; Design Engineer Lead | 120h | 120h | 13,080 | 13,080 |
| 83 | 1.2.7 | Review design document | 2d | 2020-05-06 A | 2020-05-07 A | 82 | 100% |  |  | Design Engineer Lead; Development Engineer Lead; Project Manager | 48h | 48h | 8,560 | 8,560 |
| 84 | 1.2.8 | Finalize design document (milestone 02) | 2d | 2020-05-08 A | 2020-05-11 A | 83 | 100% |  |  | Design Engineer Lead; Development Engineer Lead; Project Manager; Testing Engineer Lead | 64h | 64h | 10,832 | 10,832 |
| 85 | 1.3 | **Development** | 104d | 2020-04-09 A | 2020-09-01 |  | 99% | 1.17d | 3d |  | 1930.4h | 1848.4h | 264,060.8 | 250,268.8 |
| 86 | 1.3.1 | **UI/UX** | 14d | 2020-04-09 A | 2020-04-28 A |  | 100% |  |  |  | 108h | 108h | 14,580 | 14,580 |
| 87 | 1.3.1.1 | Develop mobile application UI/UX | 10d | 2020-04-09 A | 2020-04-22 A | 81 | 100% |  |  | Development Engineer 1 [50%] | 40h | 40h | 5,400 | 5,400 |
| 88 | 1.3.1.2 | Develop web page UI/UX | 11d | 2020-04-09 A | 2020-04-23 A | 81 | 100% |  |  | Development Engineer 1 [50%] | 44h | 44h | 5,940 | 5,940 |
| 89 | 1.3.1.3 | Review/Finalize UI/UX development | 3d | 2020-04-24 A | 2020-04-28 A | 87, 88 | 100% |  |  | Development Engineer 1 | 24h | 24h | 3,240 | 3,240 |
| 90 | 1.3.2 | **Host computer system** | 37d | 2020-05-01 A | 2020-06-22 A |  | 100% |  |  |  | 220h | 220h | 29,700 | 29,700 |
| 91 | 1.3.2.1 | Build network between mobile app & RF sensors | 30d | 2020-05-01 A | 2020-06-11 A | 52 | 100% |  |  | Development Engineer 2 [50%] | 120h | 120h | 16,200 | 16,200 |
| 92 | 1.3.2.2 | Build real-time updating system | 12d | 2020-05-01 A | 2020-05-18 A | 52 | 100% |  |  | Development Engineer 2 [50%] | 48h | 48h | 6,480 | 6,480 |
| 93 | 1.3.2.3 | Install OS | 2d | 2020-06-12 A | 2020-06-15 A | 52, 92, 91 | 100% |  |  | Development Engineer 2 [50%] | 8h | 8h | 1,080 | 1,080 |
| 94 | 1.3.2.4 | Develop data encryption | 3d | 2020-06-12 A | 2020-06-16 A | 52, 92, 91 | 100% |  |  | Development Engineer 2 [50%] | 12h | 12h | 1,620 | 1,620 |
| 95 | 1.3.2.5 | Review/Finalize Host computer system development | 4d | 2020-06-17 A | 2020-06-22 A | 91, 92, 93, 94 | 100% |  |  | Development Engineer 2 | 32h | 32h | 4,320 | 4,320 |
| 96 | 1.3.3 | **Server/back-end** | 75d | 2020-05-01 A | 2020-08-13 A |  | 100% |  |  |  | 920h | 920h | 124,200 | 124,200 |
| 97 | 1.3.3.1 | Integrate DBMS into system | 5d | 2020-05-01 A | 2020-05-07 A | 59 | 100% |  |  | Development Engineer 3 | 40h | 40h | 5,400 | 5,400 |
| 98 | 1.3.3.2 | Build schema | 30d | 2020-05-08 A | 2020-06-18 A | 59, 97 | 100% |  |  | Development Engineer 5 | 240h | 240h | 32,400 | 32,400 |
| 99 | 1.3.3.3 | Build service tier applications | 20d | 2020-06-19 A | 2020-07-16 A | 59, 98 | 100% |  |  | Development Engineer 3; Development Engineer 4; Development Engineer 5 | 480h | 480h | 64,800 | 64,800 |
| 100 | 1.3.3.4 | Develop security protocols to protect DB data | 15d | 2020-07-17 A | 2020-08-06 A | 59, 98, 99 | 100% |  |  | Development Engineer 3 | 120h | 120h | 16,200 | 16,200 |
| 101 | 1.3.3.5 | Review/Finalize server/back-end development | 5d | 2020-08-07 A | 2020-08-13 A | 97, 98, 99, 100 | 100% |  |  | Development Engineer 3 | 40h | 40h | 5,400 | 5,400 |

| ID | WBS | Task | Duration | Start | Finish | Predecessors | Complete | Remaining | Total slack | Free slack | Constraint | Resources | Work | Actual work | Cost | Actual cost |
| --- | --- | --- | --- | --- | --- | --- | --- | --- | --- | --- | --- | --- | --- | --- | --- | --- |
| 102 | 1.3.4 | **Mobile application** | 33d | 2020-05-01 A | 2020-06-16 A |  | 100% |  |  |  |  |  | 350.4h | 350.4h | 43,792.8 | 43,792.8 |
| 103 | 1.3.4.1 | Program UTD campus map display | 12d | 2020-05-01 A | 2020-05-18 A | 68 | 100% |  |  |  |  | Development Engineer 7 | 96h | 96h | 12,960 | 12,960 |
| 104 | 1.3.4.2 | Program real-time updating map display | 14d | 2020-05-19 A | 2020-06-05 A | 68, 103 | 100% |  |  |  |  | Testing Engineer 7 [95%] | 106.4h | 106.4h | 10,852.8 | 10,852.8 |
| 105 | 1.3.4.3 | Program login/logout pages | 5d | 2020-05-01 A | 2020-05-07 A | 68 | 100% |  |  |  |  | Development Engineer 6 [50%] | 20h | 20h | 2,700 | 2,700 |
| 106 | 1.3.4.4 | Program payment page | 5d | 2020-05-01 A | 2020-05-07 A | 68 | 100% |  |  |  |  | Development Engineer 8 [50%] | 20h | 20h | 2,700 | 2,700 |
| 107 | 1.3.4.5 | Program transaction validator | 6d | 2020-05-01 A | 2020-05-08 A | 68 | 100% |  |  |  |  | Development Engineer 8 [50%] | 24h | 24h | 3,240 | 3,240 |
| 108 | 1.3.4.6 | Program user authentication procedure | 7d | 2020-05-01 A | 2020-05-11 A | 68 | 100% |  |  |  |  | Development Engineer 6 [50%] | 28h | 28h | 3,780 | 3,780 |
| 109 | 1.3.4.7 | Review/Finalize mobile application development | 7d | 2020-06-08 A | 2020-06-16 A | 103, 104, 105, 106, 107, 108 | 100% |  |  |  |  | Development Engineer 7 | 56h | 56h | 7,560 | 7,560 |
| 110 | 1.3.5 | **Web page** | 18d | 2020-05-01 A | 2020-05-26 A |  | 100% |  |  |  |  |  | 132h | 132h | 17,820 | 17,820 |
| 111 | 1.3.5.1 | Program login/logout pages | 5d | 2020-05-01 A | 2020-05-07 A | 68 | 100% |  |  |  |  | Development Engineer 9 [50%] | 20h | 20h | 2,700 | 2,700 |
| 112 | 1.3.5.2 | Program payment pages | 3d | 2020-05-11 A | 2020-05-13 A | 111, 115 | 100% |  |  |  |  | Development Engineer 9 [50%] | 12h | 12h | 1,620 | 1,620 |
| 113 | 1.3.5.3 | Program admin page | 4d | 2020-05-18 A | 2020-05-21 A | 112, 114 | 100% |  |  |  |  | Development Engineer 9 | 32h | 32h | 4,320 | 4,320 |
| 114 | 1.3.5.4 | Program payment validator | 5d | 2020-05-11 A | 2020-05-15 A | 111, 115 | 100% |  |  |  |  | Development Engineer 9 [50%] | 20h | 20h | 2,700 | 2,700 |
| 115 | 1.3.5.5 | Program user authentication procedure | 6d | 2020-05-01 A | 2020-05-08 A | 68 | 100% |  |  |  |  | Development Engineer 9 [50%] | 24h | 24h | 3,240 | 3,240 |
| 116 | 1.3.5.6 | Review/Finalize web page development | 3d | 2020-05-22 A | 2020-05-26 A | 111, 112, 113, 114, 115 | 100% |  |  |  |  | Development Engineer 9 | 24h | 24h | 3,240 | 3,240 |
| 117 | 1.3.6 | Draft final development document | 8d | 2020-08-14 A | 2020-08-25 A | 109, 101, 95, 89 | 100% |  |  |  |  | Development Engineer Lead | 64h | 64h | 10,240 | 10,240 |
| 118 | 1.3.7 | Review development document | 3d | 2020-08-26 A | 2020-08-28 | 117 | 75% | 0.75d | 3d | 0d |  | Development Engineer Lead; Project Manager; Testing Engineer Lead | 72h | 54h | 13,248 | 9,936 |
| 119 | 1.3.8 | Finalize development (milestone 03) | 2d | 2020-08-31 | 2020-09-01 | 118 |  |  | 3d |  |  | Deployment Engineer Lead; Development Engineer Lead; Project Manager; Testing Engineer Lead | 64h |  | 10,480 |  |
| 120 | 1.4 | **Testing** | 108d | 2020-04-29 A | 2020-09-25 |  | 91% | 9.2d | 0d |  |  |  | 1986.8h | 1476.8h | 218,893 | 161,713 |
| 121 | 1.4.1 | Write Unit test | 10d | 2020-04-29 A | 2020-05-12 A |  | 100% |  |  |  | start no earlier than 2020-04-29 | Testing Engineer 1; Testing Engineer 12 [33%]; Testing Engineer Lead | 122.4h | 122.4h | 13,124.8 | 13,124.8 |
| 122 | 1.4.2 | Review Unit tests | 3d | 2020-05-13 A | 2020-05-15 A | 121 | 100% |  |  |  |  | Project Manager; Testing Engineer Lead | 48h | 48h | 9,408 | 9,408 |
| 123 | 1.4.3 | Finalize unit tests | 1d | 2020-05-18 A | 2020-05-18 A | 122 | 100% |  |  |  |  | Project Manager; Requirements Engineer Lead; Testing Engineer Lead; Development Engineer Lead | 32h | 32h | 5,296 | 5,296 |
| 124 | 1.4.4 | **Test mobile application** | 16d | 2020-06-17 A | 2020-07-08 A |  | 100% |  |  |  |  |  | 129.12h | 129.12h | 13,170.24 | 13,170.24 |
| 125 | 1.4.4.1 | Test UTD map display | 7d | 2020-06-17 A | 2020-06-25 A | 109 | 100% |  |  |  |  | Testing Engineer 1 [50%] | 28h | 28h | 2,856 | 2,856 |
| 126 | 1.4.4.2 | Test real-time parking lot updating | 7d | 2020-06-26 A | 2020-07-06 A | 125 | 100% |  |  |  |  | Testing Engineer 1 [50%] | 28h | 28h | 2,856 | 2,856 |
| 127 | 1.4.4.3 | Test login/logout pages | 8d | 2020-06-17 A | 2020-06-26 A | 109 | 100% |  |  |  |  | Testing Engineer 2 [33%] | 21.12h | 21.12h | 2,154.24 | 2,154.24 |
| 128 | 1.4.4.4 | Test user authentication systems | 2d | 2020-06-29 A | 2020-06-30 A | 127 | 100% |  |  |  |  | Testing Engineer 2 [50%] | 8h | 8h | 816 | 816 |
| 129 | 1.4.4.5 | Test payment page | 5d | 2020-06-17 A | 2020-06-23 A | 109 | 100% |  |  |  |  | Testing Engineer 2 [50%] | 20h | 20h | 2,040 | 2,040 |
| 130 | 1.4.4.6 | Test payment validation system | 2d | 2020-06-24 A | 2020-06-25 A | 129 | 100% |  |  |  |  | Testing Engineer 2 [50%] | 8h | 8h | 816 | 816 |
| 131 | 1.4.4.7 | Finalize mobile application testing | 2d | 2020-07-07 A | 2020-07-08 A | 125, 126, 127, 128, 129, 130 | 100% |  |  |  |  | Testing Engineer 1 [50%]; Testing Engineer 2 [50%] | 16h | 16h | 1,632 | 1,632 |

| ID | WBS | Task | Duration | Start | Finish | Predecessors | Complete | Remaining | Total slack | Resources | Work | Actual work | Cost | Actual cost |
| --- | --- | --- | --- | --- | --- | --- | --- | --- | --- | --- | --- | --- | --- | --- |
| 132 | 1.4.5 | **Test Server/back-end** | 16d | 2020-08-14 A | 2020-09-04 |  | 91% | 1.42d | 0d |  | 108h | 82h | 11,016 | 8,364 |
| 133 | 1.4.5.1 | Test DBMS integration | 8d | 2020-08-14 A | 2020-08-25 A | 101 | 100% |  |  | Testing Engineer 3 [25%] | 16h | 16h | 1,632 | 1,632 |
| 134 | 1.4.5.2 | Test DB security | 12d | 2020-08-14 A | 2020-08-31 A | 101 | 100% |  |  | Testing Engineer 3 [25%] | 24h | 24h | 2,448 | 2,448 |
| 135 | 1.4.5.3 | Test DB schema | 9d | 2020-08-14 A | 2020-08-26 A | 101 | 100% |  |  | Testing Engineer 3 [25%] | 18h | 18h | 1,836 | 1,836 |
| 136 | 1.4.5.4 | Test service tier applications | 13d | 2020-08-14 A | 2020-09-01 | 101 | 92% | 1d | 0d | Testing Engineer 3 [25%] | 26h | 24h | 2,652 | 2,448 |
| 137 | 1.4.5.5 | Finalize server/back-end testing | 3d | 2020-09-02 | 2020-09-04 | 133, 134, 135, 136 |  |  | 0d | Testing Engineer 3 | 24h |  | 2,448 |  |
| 138 | 1.4.6 | **Test host computer system** | 17d | 2020-06-23 A | 2020-07-15 A |  | 100% |  |  |  | 288.8h | 288.8h | 30,713 | 30,713 |
| 139 | 1.4.6.1 | Test networks between mobile app and RF sensors | 14d | 2020-06-23 A | 2020-07-10 A | 95 | 100% |  |  | Testing Engineer 4 [95%] | 106.4h | 106.4h | 10,852.8 | 10,852.8 |
| 140 | 1.4.6.2 | Test real-time parking lot updating | 7d | 2020-06-23 A | 2020-07-01 A | 95 | 100% |  |  | Testing Engineer 5 [95%] | 53.2h | 53.2h | 5,426.4 | 5,426.4 |
| 141 | 1.4.6.3 | Test installed OS | 8d | 2020-06-23 A | 2020-07-02 A | 95 | 100% |  |  | Testing Engineer 6 [95%] | 60.8h | 60.8h | 6,201.6 | 6,201.6 |
| 142 | 1.4.6.4 | Test system data encryption | 3d | 2020-06-23 A | 2020-06-25 A | 95 | 100% |  |  | Testing Engineer 7 [95%] | 22.8h | 22.8h | 3,581 | 3,581 |
| 143 | 1.4.6.5 | Finalize host computer system testing | 3d | 2020-07-13 A | 2020-07-15 A | 139, 140, 141, 142 | 100% |  |  | Testing Engineer 4 [95%]; Testing Engineer 5 [95%] | 45.6h | 45.6h | 4,651.2 | 4,651.2 |
| 144 | 1.4.7 | **Test Web page** | 6d | 2020-05-27 A | 2020-06-03 A |  | 100% |  |  |  | 159.6h | 159.6h | 16,279.2 | 16,279.2 |
| 145 | 1.4.7.1 | Test login/logout pages | 2d | 2020-05-27 A | 2020-05-28 A | 116 | 100% |  |  | Testing Engineer 8 [95%] | 15.2h | 15.2h | 1,550.4 | 1,550.4 |
| 146 | 1.4.7.2 | Test payment pages | 2d | 2020-05-27 A | 2020-05-28 A | 116 | 100% |  |  | Testing Engineer 9 [95%] | 15.2h | 15.2h | 1,550.4 | 1,550.4 |
| 147 | 1.4.7.3 | Test admin page | 5d | 2020-05-27 A | 2020-06-02 A | 116 | 100% |  |  | Testing Engineer 10 [95%]; Testing Engineer 11 [95%] | 76h | 76h | 7,752 | 7,752 |
| 148 | 1.4.7.4 | Test payment validation system | 2d | 2020-05-29 A | 2020-06-01 A | 145 | 100% |  |  | Testing Engineer 8 [95%] | 15.2h | 15.2h | 1,550.4 | 1,550.4 |
| 149 | 1.4.7.5 | Test user authentication system | 2d | 2020-05-29 A | 2020-06-01 A | 146 | 100% |  |  | Testing Engineer 9 [95%] | 15.2h | 15.2h | 1,550.4 | 1,550.4 |
| 150 | 1.4.7.6 | Finalize web page testing | 1d | 2020-06-03 A | 2020-06-03 A | 145, 146, 147, 148, 149 | 100% |  |  | Testing Engineer 8 [95%]; Testing Engineer 9 [95%]; Testing Engineer 10 [95%] | 22.8h | 22.8h | 2,325.6 | 2,325.6 |
| 151 | 1.4.8 | **UI/UX** | 9d | 2020-04-29 A | 2020-05-11 A |  | 100% |  |  |  | 44.88h | 44.88h | 4,577.76 | 4,577.76 |
| 152 | 1.4.8.1 | Test mobile application UI/UX | 7d | 2020-04-29 A | 2020-05-07 A | 89 | 100% |  |  | Testing Engineer 12 [33%] | 18.48h | 18.48h | 1,884.96 | 1,884.96 |
| 153 | 1.4.8.2 | Test web page UI/UX | 8d | 2020-04-29 A | 2020-05-08 A | 89 | 100% |  |  | Testing Engineer 12 [33%] | 21.12h | 21.12h | 2,154.24 | 2,154.24 |
| 154 | 1.4.8.3 | Finalize UI/UX testing | 1d | 2020-05-11 A | 2020-05-11 A | 152, 153 | 100% |  |  | Testing Engineer 12 [66%] | 5.28h | 5.28h | 538.56 | 538.56 |
| 155 | 1.4.9 | Defect testing | 10d | 2020-09-07 | 2020-09-18 | 121, 131, 137, 143, 150, 154, 119 |  |  | 0d | Testing Engineer 1 [95%]; Testing Engineer 4 [95%]; Testing Engineer 6 [95%]; Testing Engineer 8 [95%]; Testing Engineer 9 [95%] | 380h |  | 38,760 |  |
| 156 | 1.4.10 | Regression testing | 45d | 2020-05-19 A | 2020-07-20 A | 123 | 100% |  |  | Testing Engineer 1 [5%]; Testing Engineer 2 [5%]; Testing Engineer 3 [5%]; Testing Engineer 4 [5%]; Testing Engineer 5 [5%]; Testing Engineer 6 [5%]; Testing Engineer 7 [5%]; Testing Engineer 8 [5%]; Testing Engineer 9 [5%]; Testing Engineer 10 [5%]; Testing Engineer 11 [5%]; Testing Engineer 12 [5%]; Testing Engineer Lead [5%] | 234h | 234h | 24,588 | 24,588 |
| 157 | 1.4.11 | Conduct end-to-end testing | 6d | 2020-07-21 A | 2020-07-28 A | 156 | 100% |  |  | Testing Engineer Lead; Testing Engineer 1; Testing Engineer 2; Testing Engineer 3; Testing Engineer 4; Testing Engineer 8; Testing Engineer 11 | 336h | 336h | 36,192 | 36,192 |
| 158 | 1.4.12 | Draft final testing document | 2d | 2020-09-21 | 2020-09-22 | 157, 155 |  |  | 0d | Testing Engineer Lead | 16h |  | 2,272 |  |
| 159 | 1.4.13 | Review testing document | 2d | 2020-09-23 | 2020-09-24 | 158 |  |  | 0d | Project Manager; Testing Engineer 1; Testing Engineer 7; Testing Engineer Lead | 64h |  | 9,536 |  |
| 160 | 1.4.14 | Finalize testing (milestone M04) | 1d | 2020-09-25 | 2020-09-25 | 159 |  |  | 0d | Deployment Engineer Lead; Project Manager; Testing Engineer Lead | 24h |  | 3,960 |  |

| ID | WBS | Task | Type | Duration | Start | Finish | Predecessors | Complete | Remaining | Total slack | Resources | Work | Actual work | Cost | Actual cost |
| --- | --- | --- | --- | --- | --- | --- | --- | --- | --- | --- | --- | --- | --- | --- | --- |
| 161 | 1.5 | **Deployment** |  | 92d | 2020-07-16 A | 2020-11-20 |  | 14% | 79.12d | 0d |  | 1036h | 48h | 108,272 | 4,416 |
| 162 | 1.5.1 | Setup host computer system |  | 5d | 2020-07-16 A | 2020-07-22 A | 143 | 100% |  |  | Deployment Engineer 1 [50%]; Deployment Engineer 2 [50%] | 40h | 40h | 3,680 | 3,680 |
| 163 | 1.5.2 | Begin capturing car information from parking lot gates |  | 1d | 2020-09-28 | 2020-09-28 | 131, 137, 143, 154, 160 |  |  | 0d | Deployment Engineer 4 | 8h |  | 736 |  |
| 164 | 1.5.3 | Launch database |  | 3d | 2020-09-07 | 2020-09-09 | 137 |  |  | 13d | Deployment Engineer 3 | 24h |  | 2,208 |  |
| 165 | 1.5.4 | Establish connection between UTD database and app database |  | 1d | 2020-09-07 | 2020-09-07 | 137, 143 |  |  | 15d | Deployment Engineer 1 [50%] | 4h |  | 368 |  |
| 166 | 1.5.5 | Open network ports/sockets |  | 2d | 2020-07-16 A | 2020-07-17 A | 143 | 100% |  |  | Deployment Engineer 2 [50%] | 8h | 8h | 736 | 736 |
| 167 | 1.5.6 | Connect system components |  | 16d | 2020-09-29 | 2020-10-20 | 160, 163, 162, 164, 165, 166 |  |  | 0d | Deployment Engineer 4; Deployment Engineer Lead; Development Engineer Lead | 336h |  | 39,760 |  |
| 168 | 1.5.7 | **Launch app** |  | 1d | 2020-10-21 | 2020-10-21 |  |  |  | 0d |  | 8h |  | 736 |  |
| 169 | 1.5.7.1 | Release on Apple App Store |  | 1d | 2020-10-21 | 2020-10-21 | 167 |  |  | 0d | Deployment Engineer 3 [50%] | 4h |  | 368 |  |
| 170 | 1.5.7.2 | Release on Google Play Store |  | 1d | 2020-10-21 | 2020-10-21 | 167 |  |  | 0d | Deployment Engineer 3 [50%] | 4h |  | 368 |  |
| 171 | 1.5.8 | Train client on system |  | 14d | 2020-10-22 | 2020-11-10 | 160, 162, 163, 164, 166, 167, 169, 170 |  |  | 0d | Deployment Engineer 1; Deployment Engineer 2; Deployment Engineer 3; Deployment Engineer 4; Deployment Engineer Lead | 560h |  | 52,752 |  |
| 172 | 1.5.9 | Draft final deployment document |  | 2d | 2020-11-11 | 2020-11-12 | 171 |  |  | 0d | Deployment Engineer Lead | 16h |  | 1,648 |  |
| 173 | 1.5.10 | Review deployment document |  | 2d | 2020-11-13 | 2020-11-17 | 172 |  |  | 0d | Deployment Engineer Lead; Project Manager | 16h |  | 2,824 |  |
| 174 | 1.5.11 | Finalize deployment (milestone M05) |  | 2d | 2020-11-18 | 2020-11-20 | 173 |  |  | 0d | Deployment Engineer Lead; Project Manager | 16h |  | 2,824 |  |
| 175 | 1.6 | Work by: Mohammad Asif, Dylan Capece, Blake Stroud, Luke Padgett, Everett McCrea | manual | 1d? | 2020-02-19 | 2020-02-19 |  |  |  |  |  |  |  |  |  |
